# Pau-Start_2-11-2008

Schedule from MS Project, 2009-09-01 to 2009-11-26.
IG

## Calendars

- Estándar: Mon-Fri 08:00-14:00, 15:00-17:00; Sat-Sun off. Exceptions (off unless hours are given): 2009-10-09, 2009-10-12.

## Resources

| Resource |
| --- |
| director |
| storyman |
| Producción |
| Estudio-Audio |
| Téc. Edición |
| Dibujante |
| Modelador+set-up |
| Layout |
| Animador |
| Ilum/Render |
| Músico |
| Estudio Video |
| Granja Render |
| 01 Producción |
| 02Producción |
| 03Producción |
| 04 Producción |
| 05Producción |
| 06Producción |
| 02 Producción |
| 03 Producción |
| 05 Producción |
| 06 Producción |
| 07 Producción |
| 08 Producción |
| 09 Producción |
| 10 Producción |
| 11 Producción |
| 12 Producción |
| 13 Producción |
| mar 03/11/09 |

## Schedule

| ID | WBS | Task | Duration | Start | Finish | Predecessors | Baseline start | Baseline finish | Baseline duration | Total slack | Free slack | Constraint | Resources | Work |
| --- | --- | --- | --- | --- | --- | --- | --- | --- | --- | --- | --- | --- | --- | --- |
| 1 | 1 | **Total Producción** | 60.28d | 2009-09-01 | 2009-11-26 |  | 2008-11-03 | 2009-01-22 | 59d | 0d |  |  | 01 Producción | 3510.23h |
| 2 | 1.1 | **Pre-producción** | 12d | 2009-09-01 | 2009-09-17 |  | 2008-11-03 | 2008-11-18 | 12d | 0d |  |  |  | 128h |
| 3 | 1.1.1 | Guión Técnico | 2d | 2009-09-01 | 2009-09-03 |  | 2008-11-03 | 2008-11-04 | 2d | 0d |  | start no earlier than 2009-09-01 | director | 16h |
| 4 | 1.1.2 | Desglose Guión | 1d | 2009-09-03 | 2009-09-04 | 3 | 2008-11-05 | 2008-11-05 | 1d | 0d |  |  | Producción | 8h |
| 5 | 1.1.3 | Storyboard | 4d | 2009-09-04 | 2009-09-10 | 4 | 2008-11-06 | 2008-11-11 | 4d | 0d |  |  | storyman [200%] | 64h |
| 6 | 1.1.4 | Supervisión | 1d | 2009-09-10 | 2009-09-11 | 5 | 2008-11-12 | 2008-11-12 | 1d | 0d |  |  | director | 8h |
| 7 | 1.1.5 | Previos Voces | 2d | 2009-09-11 | 2009-09-15 | 6 | 2008-11-13 | 2008-11-14 | 2d | 0d |  |  | Estudio-Audio | 16h |
| 8 | 1.1.6 | Animática | 2d | 2009-09-15 | 2009-09-17 | 7 | 2008-11-17 | 2008-11-18 | 2d | 0d |  |  | Téc. Edición | 16h |
| 9 | 1.2 | **Producción** | 42d | 2009-09-17 | 2009-11-18 | 8 | 2008-11-19 | 2009-01-14 | 41d | 0d |  |  |  | 1772h |
| 10 | 1.2.1 | Diseño de Personajes Secundarios | 3d | 2009-09-17 | 2009-09-22 |  | 2008-11-19 | 2008-11-21 | 3d | 0d |  |  | Dibujante | 24h |
| 11 | 1.2.2 | Diseño de Fondos y Props | 3d | 2009-09-22 | 2009-09-25 | 10 | 2008-11-24 | 2008-11-26 | 3d | 0d |  |  | Dibujante | 24h |
| 12 | 1.2.3 | Modelado de Props | 2d | 2009-09-25 | 2009-09-29 | 11 | 2008-11-27 | 2008-11-28 | 2d | 0d |  |  | Modelador+set-up | 16h |
| 13 | 1.2.4 | Texturizado de Props | 1d | 2009-09-29 | 2009-09-30 | 12 | 2008-11-27 | 2008-11-27 | 1d | 0d |  |  | Modelador+set-up | 8h |
| 14 | 1.2.5 | Modelado Personajes secundarios y Morfos | 4d | 2009-09-22 | 2009-09-28 | 10 | 2008-11-28 | 2008-12-02 | 3d | 39.28d | 0d | start no earlier than 2008-11-27 | Modelador+set-up | 32h |
| 15 | 1.2.6 | Texturizado Personajes | 2d | 2009-09-28 | 2009-09-30 | 14 | 2008-11-28 | 2008-12-01 | 2d | 39.28d |  |  | Modelador+set-up | 16h |
| 16 | 1.2.7 | Rigging Personajes y objetos | 3d | 2009-09-30 | 2009-10-05 | 13 | 2008-12-02 | 2008-12-03 | 2d | 0d |  |  | Modelador+set-up | 24h |
| 17 | 1.2.8 | Revisión Modelados | 1d | 2009-10-05 | 2009-10-06 | 16 | 2008-12-04 | 2008-12-04 | 1d | 0d |  |  | director | 8h |
| 18 | 1.2.9 | Lay-outs | 7d | 2009-10-06 | 2009-10-19 | 17 | 2008-12-05 | 2008-12-15 | 7d | 0d |  |  | Layout | 56h |
| 19 | 1.2.10 | Supervisión | 6d | 2009-10-19 | 2009-10-27 | 18 | 2008-12-16 | 2008-12-23 | 6d | 0d |  |  | director | 48h |
| 20 | 1.2.11 | Animación | 13d | 2009-10-27 | 2009-11-13 | 19 | 2008-12-24 | 2009-01-09 | 13d | 0.28d | 0d |  | Animador [1200%] | 1248h |
| 21 | 1.2.12 | <Margen> | 5d | 2009-10-27 | 2009-11-03 | 19 | 2008-12-24 | 2008-12-30 | 5d | 0d |  |  |  |  |
| 22 | 1.2.13 | Retakes | 2.5d | 2009-11-03 | 2009-11-05 | 21 | 2008-12-31 | 2009-01-02 | 2.5d | 14.78d |  |  | Animador [1200%] | 240h |
| 23 | 1.2.14 | Aprobación Final | 5d | 2009-11-03 | 2009-11-10 | 21 | 2008-12-31 | 2009-01-06 | 5d | 12.28d |  |  | director [10%] | 4h |
| 24 | 1.2.15 | Animática | 3d | 2009-11-13 | 2009-11-18 | 20 | 2009-01-12 | 2009-01-14 | 3d | 0.28d | 0d |  | Téc. Edición | 24h |

| ID | WBS | Task | Duration | Start | Finish | Predecessors | Baseline start | Baseline finish | Baseline duration | Total slack | Free slack | Constraint | Resources | Work |
| --- | --- | --- | --- | --- | --- | --- | --- | --- | --- | --- | --- | --- | --- | --- |
| 25 | 1.3 | **Post-producción** | 22.28d | 2009-10-27 | 2009-11-26 | 19 | 2008-12-31 | 2009-01-15 | 11.4d | 0d |  |  |  | 968h |
| 26 | 1.3.1 | Lighting | 10d | 2009-11-03 | 2009-11-17 | 21 | 2008-12-31 | 2009-01-13 | 10d | 7.28d |  |  | Ilum/Render | 80h |
| 27 | 1.3.2 | <Margen> | 1d | 2009-11-03 | 2009-11-04 | 21 | 2008-12-31 | 2008-12-31 | 1d | 0d |  |  |  |  |
| 28 | 1.3.3 | Rendering | 10.4d | 2009-11-04 | 2009-11-18 | 27 | 2009-01-01 | 2009-01-15 | 10.4d | 0d |  |  | Granja Render [1000%] | 832h |
| 29 | 1.3.4 | <Margen> | 5.88d | 2009-11-18 | 2009-11-26 | 28 | 2009-01-01 | 2009-01-05 | 3d | 0d |  |  |  |  |
| 30 | 1.3.5 | Imagen Master Betacam | 2d | 2009-11-03 | 2009-11-05 | 31 | 2009-01-13 | 2009-01-14 | 2d | 15.28d |  |  | Estudio Video | 16h |
| 31 | 1.3.6 | Edición y Composición Imagen | 5d | 2009-10-27 | 2009-11-03 |  | 2009-01-06 | 2009-01-12 | 5d | 12.28d | 0d |  | Téc. Edición | 40h |
| 32 | 1.4 | **Sonido** | 17d | 2009-11-03 | 2009-11-26 | 31 | 2009-01-13 | 2009-01-22 | 8d | 0.28d |  |  |  | 40h |
| 33 | 1.4.1 | Doblaje | 2d | 2009-11-03 | 2009-11-05 |  | 2009-01-13 | 2009-01-14 | 2d | 12.28d | 0d |  | Estudio-Audio | 16h |
| 34 | 1.4.2 | Efectos Sonoros | 2d | 2009-11-05 | 2009-11-09 | 33 | 2009-01-15 | 2009-01-16 | 2d | 12.28d | 12d |  | Estudio-Audio | 16h |
| 35 | 1.4.3 | Masterización | 0.5d | 2009-11-25 | 2009-11-25 | 34, 38 | 2009-01-22 | 2009-01-22 | 0.5d | 0.28d | 0d |  | Estudio-Audio | 4h |
| 36 | 1.4.4 | Máster Betacam | 0.5d | 2009-11-25 | 2009-11-26 | 35 | 2009-01-22 | 2009-01-22 | 0.5d | 0.28d |  |  | Estudio-Audio | 4h |
| 37 | 1.5 | Música Esbozo | 10d | 2009-09-17 | 2009-10-01 | 8 | 2008-11-19 | 2008-12-02 | 10d | 32.28d | 32d |  | Músico | 80h |
| 38 | 1.6 | Música Final | 5d | 2009-11-18 | 2009-11-25 | 24, 37 | 2009-01-15 | 2009-01-21 | 5d | 0.28d | 0d |  | Músico | 40h |
| 40 | 2 | **Total Producción** | 60.28d | 2009-09-01 | 2009-11-26 |  | 2008-11-03 | 2009-01-22 | 59d | 0d |  |  | 01 Producción | 3510.24h |
| 41 | 2.1 | **Pre-producción** | 12d | 2009-09-01 | 2009-09-17 |  | 2008-11-03 | 2008-11-18 | 12d | 0d |  |  |  | 128h |
| 42 | 2.1.1 | Guión Técnico | 2d | 2009-09-01 | 2009-09-03 |  | 2008-11-03 | 2008-11-04 | 2d | 0d |  | start no earlier than 2009-09-01 | director | 16h |
| 43 | 2.1.2 | Desglose Guión | 1d | 2009-09-03 | 2009-09-04 | 42 | 2008-11-05 | 2008-11-05 | 1d | 0d |  |  | Producción | 8h |
| 44 | 2.1.3 | Storyboard | 4d | 2009-09-04 | 2009-09-10 | 43 | 2008-11-06 | 2008-11-11 | 4d | 0d |  |  | storyman [200%] | 64h |
| 45 | 2.1.4 | Supervisión | 1d | 2009-09-10 | 2009-09-11 | 44 | 2008-11-12 | 2008-11-12 | 1d | 0d |  |  | director | 8h |
| 46 | 2.1.5 | Previos Voces | 2d | 2009-09-11 | 2009-09-15 | 45 | 2008-11-13 | 2008-11-14 | 2d | 0d |  |  | Estudio-Audio | 16h |
| 47 | 2.1.6 | Animática | 2d | 2009-09-15 | 2009-09-17 | 46 | 2008-11-17 | 2008-11-18 | 2d | 0d |  |  | Téc. Edición | 16h |
| 48 | 2.2 | **Producción** | 42d | 2009-09-17 | 2009-11-18 | 47 | 2008-11-19 | 2009-01-14 | 41d | 0d |  |  |  | 1772h |
| 49 | 2.2.1 | Diseño de Personajes Secundarios | 3d | 2009-09-17 | 2009-09-22 |  | 2008-11-19 | 2008-11-21 | 3d | 0d |  |  | Dibujante | 24h |
| 50 | 2.2.2 | Diseño de Fondos y Props | 3d | 2009-09-22 | 2009-09-25 | 49 | 2008-11-24 | 2008-11-26 | 3d | 0d |  |  | Dibujante | 24h |
| 51 | 2.2.3 | Modelado de Props | 2d | 2009-09-25 | 2009-09-29 | 50 | 2008-11-27 | 2008-11-28 | 2d | 0d |  |  | Modelador+set-up | 16h |
| 52 | 2.2.4 | Texturizado de Props | 1d | 2009-09-29 | 2009-09-30 | 51 | 2008-11-27 | 2008-11-27 | 1d | 0d |  |  | Modelador+set-up | 8h |
| 53 | 2.2.5 | Modelado Personajes secundarios y Morfos | 4d | 2009-09-22 | 2009-09-28 | 49 | 2008-11-28 | 2008-12-02 | 3d | 39.28d | 0d | start no earlier than 2008-11-27 | Modelador+set-up | 32h |
| 54 | 2.2.6 | Texturizado Personajes | 2d | 2009-09-28 | 2009-09-30 | 53 | 2008-11-28 | 2008-12-01 | 2d | 39.28d |  |  | Modelador+set-up | 16h |
| 55 | 2.2.7 | Rigging Personajes y objetos | 3d | 2009-09-30 | 2009-10-05 | 52 | 2008-12-02 | 2008-12-03 | 2d | 0d |  |  | Modelador+set-up | 24h |
| 56 | 2.2.8 | Revisión Modelados | 1d | 2009-10-05 | 2009-10-06 | 55 | 2008-12-04 | 2008-12-04 | 1d | 0d |  |  | director | 8h |
| 57 | 2.2.9 | Lay-outs | 7d | 2009-10-06 | 2009-10-19 | 56 | 2008-12-05 | 2008-12-15 | 7d | 0d |  |  | Layout | 56h |
| 58 | 2.2.10 | Supervisión | 6d | 2009-10-19 | 2009-10-27 | 57 | 2008-12-16 | 2008-12-23 | 6d | 0d |  |  | director | 48h |
| 59 | 2.2.11 | Animación | 13d | 2009-10-27 | 2009-11-13 | 58 | 2008-12-24 | 2009-01-09 | 13d | 0.28d | 0d |  | Animador [1200%] | 1248h |
| 60 | 2.2.12 | <Margen> | 5d | 2009-10-27 | 2009-11-03 | 58 | 2008-12-24 | 2008-12-30 | 5d | 0d |  |  |  |  |
| 61 | 2.2.13 | Retakes | 2.5d | 2009-11-03 | 2009-11-05 | 60 | 2008-12-31 | 2009-01-02 | 2.5d | 14.78d |  |  | Animador [1200%] | 240h |
| 62 | 2.2.14 | Aprobación Final | 5d | 2009-11-03 | 2009-11-10 | 60 | 2008-12-31 | 2009-01-06 | 5d | 12.28d |  |  | director [10%] | 4h |
| 63 | 2.2.15 | Animática | 3d | 2009-11-13 | 2009-11-18 | 59 | 2009-01-12 | 2009-01-14 | 3d | 0.28d | 0d |  | Téc. Edición | 24h |

Notes:
- 28: 20 minutos el fotograma

| ID | WBS | Task | Duration | Start | Finish | Predecessors | Baseline start | Baseline finish | Baseline duration | Total slack | Free slack | Resources | Work |
| --- | --- | --- | --- | --- | --- | --- | --- | --- | --- | --- | --- | --- | --- |
| 64 | 2.3 | **Post-producción** | 22.28d | 2009-10-27 | 2009-11-26 | 58 | 2008-12-31 | 2009-01-15 | 11.4d | 0d |  |  | 968h |
| 65 | 2.3.1 | Lighting | 10d | 2009-11-03 | 2009-11-17 | 60 | 2008-12-31 | 2009-01-13 | 10d | 7.28d |  | Ilum/Render | 80h |
| 66 | 2.3.2 | <Margen> | 1d | 2009-11-03 | 2009-11-04 | 60 | 2008-12-31 | 2008-12-31 | 1d | 0d |  |  |  |
| 67 | 2.3.3 | Rendering | 10.4d | 2009-11-04 | 2009-11-18 | 66 | 2009-01-01 | 2009-01-15 | 10.4d | 0d |  | Granja Render [1000%] | 832h |
| 68 | 2.3.4 | <Margen> | 5.88d | 2009-11-18 | 2009-11-26 | 67 | 2009-01-01 | 2009-01-05 | 3d | 0d |  |  |  |
| 69 | 2.3.5 | Imagen Master Betacam | 2d | 2009-11-03 | 2009-11-05 | 70 | 2009-01-13 | 2009-01-14 | 2d | 15.28d |  | Estudio Video | 16h |
| 70 | 2.3.6 | Edición y Composición Imagen | 5d | 2009-10-27 | 2009-11-03 |  | 2009-01-06 | 2009-01-12 | 5d | 12.28d | 0d | Téc. Edición | 40h |
| 71 | 2.4 | **Sonido** | 17d | 2009-11-03 | 2009-11-26 | 70 | 2009-01-13 | 2009-01-22 | 8d | 0.28d |  |  | 40h |
| 72 | 2.4.1 | Doblaje | 2d | 2009-11-03 | 2009-11-05 |  | 2009-01-13 | 2009-01-14 | 2d | 12.28d | 0d | Estudio-Audio | 16h |
| 73 | 2.4.2 | Efectos Sonoros | 2d | 2009-11-05 | 2009-11-09 | 72 | 2009-01-15 | 2009-01-16 | 2d | 12.28d | 12d | Estudio-Audio | 16h |
| 74 | 2.4.3 | Masterización | 0.5d | 2009-11-25 | 2009-11-25 | 73, 77 | 2009-01-22 | 2009-01-22 | 0.5d | 0.28d | 0d | Estudio-Audio | 4h |
| 75 | 2.4.4 | Máster Betacam | 0.5d | 2009-11-25 | 2009-11-26 | 74 | 2009-01-22 | 2009-01-22 | 0.5d | 0.28d |  | Estudio-Audio | 4h |
| 76 | 2.5 | Música Esbozo | 10d | 2009-09-17 | 2009-10-01 | 47 | 2008-11-19 | 2008-12-02 | 10d | 32.28d | 32d | Músico | 80h |
| 77 | 2.6 | Música Final | 5d | 2009-11-18 | 2009-11-25 | 63, 76 | 2009-01-15 | 2009-01-21 | 5d | 0.28d | 0d | Músico | 40h |

Notes:
- 67: 20 minutos el fotograma
