# Pau-Start_2-11-2008

Schedule from MS Project, 2009-05-18 to 2010-03-25.
IG

## Calendars

- Estándar: Mon-Fri 08:00-14:00, 15:00-17:00; Sat-Sun off. Exceptions (off unless hours are given): 2009-08-03 to 2009-08-31, 2009-12-24 to 2009-12-25, 2009-12-31 to 2010-01-01, 2010-01-06.

## Resources

| Resource |
| --- |
| director |
| storyman |
| Producción |
| Estudio-Audio |
| Téc. Edición |
| Dibujante |
| Modelador+set-up |
| Layout |
| Animador |
| Ilum/Render |
| Músico |
| Estudio Video |
| Granja Render |
| 01 Producción |
| 02Producción |
| 03Producción |
| 04 Producción |
| 05Producción |
| 06Producción |
| 02 Producción |
| 03 Producción |
| 05 Producción |
| 06 Producción |
| 07 Producción |
| 08 Producción |
| 09 Producción |
| 10 Producción |
| 11 Producción |
| 12 Producción |
| 13 Producción |

## Schedule

| ID | WBS | Task | Duration | Start | Finish | Predecessors | Baseline start | Baseline finish | Baseline duration | Total slack | Free slack | Constraint | Resources | Work |
| --- | --- | --- | --- | --- | --- | --- | --- | --- | --- | --- | --- | --- | --- | --- |
| 2 | 1 | **Total Producción** | 60.28d | 2009-05-18 | 2009-09-08 |  | 2008-11-03 | 2009-01-22 | 59d | 136.72d |  |  | 01 Producción | 3510.24h |
| 3 | 1.1 | **Pre-producción** | 12d | 2009-05-18 | 2009-06-03 |  | 2008-11-03 | 2008-11-18 | 12d | 136.72d |  |  |  | 128h |
| 4 | 1.1.1 | Guión Técnico | 2d | 2009-05-18 | 2009-05-20 |  | 2008-11-03 | 2008-11-04 | 2d | 136.72d | 0d | start no earlier than 2009-05-18 | director | 16h |
| 5 | 1.1.2 | Desglose Guión | 1d | 2009-05-20 | 2009-05-21 | 4 | 2008-11-05 | 2008-11-05 | 1d | 136.72d | 0d |  | Producción | 8h |
| 6 | 1.1.3 | Storyboard | 4d | 2009-05-21 | 2009-05-27 | 5 | 2008-11-06 | 2008-11-11 | 4d | 136.72d | 0d |  | storyman [200%] | 64h |
| 7 | 1.1.4 | Supervisión | 1d | 2009-05-27 | 2009-05-28 | 6 | 2008-11-12 | 2008-11-12 | 1d | 136.72d | 0d |  | director | 8h |
| 8 | 1.1.5 | Previos Voces | 2d | 2009-05-28 | 2009-06-01 | 7 | 2008-11-13 | 2008-11-14 | 2d | 136.72d | 0d |  | Estudio-Audio | 16h |
| 9 | 1.1.6 | Animática | 2d | 2009-06-01 | 2009-06-03 | 8 | 2008-11-17 | 2008-11-18 | 2d | 136.72d | 0d |  | Téc. Edición | 16h |
| 10 | 1.2 | **Producción** | 42d | 2009-06-03 | 2009-07-31 | 9 | 2008-11-19 | 2009-01-14 | 41d | 136.72d |  |  |  | 1772h |
| 11 | 1.2.1 | Diseño de Personajes Secundarios | 3d | 2009-06-03 | 2009-06-08 |  | 2008-11-19 | 2008-11-21 | 3d | 136.72d | 0d |  | Dibujante | 24h |
| 12 | 1.2.2 | Diseño de Fondos y Props | 3d | 2009-06-08 | 2009-06-11 | 11 | 2008-11-24 | 2008-11-26 | 3d | 136.72d | 0d |  | Dibujante | 24h |
| 13 | 1.2.3 | Modelado de Props | 2d | 2009-06-11 | 2009-06-15 | 12 | 2008-11-27 | 2008-11-28 | 2d | 136.72d | 0d |  | Modelador+set-up | 16h |
| 14 | 1.2.4 | Texturizado de Props | 1d | 2009-06-15 | 2009-06-16 | 13 | 2008-11-27 | 2008-11-27 | 1d | 136.72d | 0d |  | Modelador+set-up | 8h |
| 15 | 1.2.5 | Modelado Personajes secundarios y Morfos | 4d | 2009-06-08 | 2009-06-12 | 11 | 2008-11-28 | 2008-12-02 | 3d | 176d | 0d | start no earlier than 2008-11-27 | Modelador+set-up | 32h |
| 16 | 1.2.6 | Texturizado Personajes | 2d | 2009-06-12 | 2009-06-16 | 15 | 2008-11-28 | 2008-12-01 | 2d | 176d |  |  | Modelador+set-up | 16h |
| 17 | 1.2.7 | Rigging Personajes y objetos | 3d | 2009-06-16 | 2009-06-19 | 14 | 2008-12-02 | 2008-12-03 | 2d | 136.72d | 0d |  | Modelador+set-up | 24h |
| 18 | 1.2.8 | Revisión Modelados | 1d | 2009-06-19 | 2009-06-22 | 17 | 2008-12-04 | 2008-12-04 | 1d | 136.72d | 0d |  | director | 8h |
| 19 | 1.2.9 | Lay-outs | 7d | 2009-06-22 | 2009-07-01 | 18 | 2008-12-05 | 2008-12-15 | 7d | 136.72d | 0d |  | Layout | 56h |
| 20 | 1.2.10 | Supervisión | 6d | 2009-07-01 | 2009-07-09 | 19 | 2008-12-16 | 2008-12-23 | 6d | 136.72d | 0d |  | director | 48h |
| 21 | 1.2.11 | Animación | 13d | 2009-07-09 | 2009-07-28 | 20 | 2008-12-24 | 2009-01-09 | 13d | 137d | 0d |  | Animador [1200%] | 1248h |
| 22 | 1.2.12 | <Margen> | 5d | 2009-07-09 | 2009-07-16 | 20 | 2008-12-24 | 2008-12-30 | 5d | 136.72d | 0d |  |  |  |
| 23 | 1.2.13 | Retakes | 2.5d | 2009-07-16 | 2009-07-20 | 22 | 2008-12-31 | 2009-01-02 | 2.5d | 151.5d |  |  | Animador [1200%] | 240h |
| 24 | 1.2.14 | Aprobación Final | 5d | 2009-07-16 | 2009-07-23 | 22 | 2008-12-31 | 2009-01-06 | 5d | 149d |  |  | director [10%] | 4h |
| 25 | 1.2.15 | Animática | 3d | 2009-07-28 | 2009-07-31 | 21 | 2009-01-12 | 2009-01-14 | 3d | 137d | 0d |  | Téc. Edición | 24h |

| ID | WBS | Task | Duration | Start | Finish | Predecessors | Baseline start | Baseline finish | Baseline duration | Total slack | Free slack | Constraint | Resources | Work |
| --- | --- | --- | --- | --- | --- | --- | --- | --- | --- | --- | --- | --- | --- | --- |
| 26 | 1.3 | **Post-producción** | 22.28d | 2009-07-09 | 2009-09-08 | 20 | 2008-12-31 | 2009-01-15 | 11.4d | 136.72d |  |  |  | 968h |
| 27 | 1.3.1 | Lighting | 10d | 2009-07-16 | 2009-07-30 | 22 | 2008-12-31 | 2009-01-13 | 10d | 144d |  |  | Ilum/Render | 80h |
| 28 | 1.3.2 | <Margen> | 1d | 2009-07-16 | 2009-07-17 | 22 | 2008-12-31 | 2008-12-31 | 1d | 136.72d | 0d |  |  |  |
| 29 | 1.3.3 | Rendering | 10.4d | 2009-07-17 | 2009-07-31 | 28 | 2009-01-01 | 2009-01-15 | 10.4d | 136.72d | 0d |  | Granja Render [1000%] | 832h |
| 30 | 1.3.4 | <Margen> | 5.88d | 2009-07-31 | 2009-09-08 | 29 | 2009-01-01 | 2009-01-05 | 3d | 136.72d |  |  |  |  |
| 31 | 1.3.5 | Imagen Master Betacam | 2d | 2009-07-16 | 2009-07-20 | 32 | 2009-01-13 | 2009-01-14 | 2d | 152d |  |  | Estudio Video | 16h |
| 32 | 1.3.6 | Edición y Composición Imagen | 5d | 2009-07-09 | 2009-07-16 |  | 2009-01-06 | 2009-01-12 | 5d | 149d | 0d |  | Téc. Edición | 40h |
| 33 | 1.4 | **Sonido** | 17d | 2009-07-16 | 2009-09-08 | 32 | 2009-01-13 | 2009-01-22 | 8d | 137d |  |  |  | 40h |
| 34 | 1.4.1 | Doblaje | 2d | 2009-07-16 | 2009-07-20 |  | 2009-01-13 | 2009-01-14 | 2d | 149d | 0d |  | Estudio-Audio | 16h |
| 35 | 1.4.2 | Efectos Sonoros | 2d | 2009-07-20 | 2009-07-22 | 34 | 2009-01-15 | 2009-01-16 | 2d | 149d | 12d |  | Estudio-Audio | 16h |
| 36 | 1.4.3 | Masterización | 0.5d | 2009-09-07 | 2009-09-07 | 35, 39 | 2009-01-22 | 2009-01-22 | 0.5d | 137d | 0d |  | Estudio-Audio | 4h |
| 37 | 1.4.4 | Máster Betacam | 0.5d | 2009-09-07 | 2009-09-08 | 36 | 2009-01-22 | 2009-01-22 | 0.5d | 137d |  |  | Estudio-Audio | 4h |
| 38 | 1.5 | Música Esbozo | 10d | 2009-06-03 | 2009-06-17 | 9 | 2008-11-19 | 2008-12-02 | 10d | 169d | 32d |  | Músico | 80h |
| 39 | 1.6 | Música Final | 5d | 2009-07-31 | 2009-09-07 | 25, 38 | 2009-01-15 | 2009-01-21 | 5d | 137d | 0d |  | Músico | 40h |
| 41 | 2 | **Total Producción** | 60.28d | 2009-09-09 | 2009-12-02 |  | 2008-11-03 | 2009-01-22 | 59d | 75.72d |  |  | 02 Producción | 3510.24h |
| 42 | 2.1 | **Pre-producción** | 12d | 2009-09-09 | 2009-09-25 |  | 2008-11-03 | 2008-11-18 | 12d | 75.72d |  |  |  | 128h |
| 43 | 2.1.1 | Guión Técnico | 2d | 2009-09-09 | 2009-09-11 |  | 2008-11-03 | 2008-11-04 | 2d | 75.72d | 0d | start no earlier than 2009-09-09 | director | 16h |
| 44 | 2.1.2 | Desglose Guión | 1d | 2009-09-11 | 2009-09-14 | 43 | 2008-11-05 | 2008-11-05 | 1d | 75.72d | 0d |  | Producción | 8h |
| 45 | 2.1.3 | Storyboard | 4d | 2009-09-14 | 2009-09-18 | 44 | 2008-11-06 | 2008-11-11 | 4d | 75.72d | 0d |  | storyman [200%] | 64h |
| 46 | 2.1.4 | Supervisión | 1d | 2009-09-18 | 2009-09-21 | 45 | 2008-11-12 | 2008-11-12 | 1d | 75.72d | 0d |  | director | 8h |
| 47 | 2.1.5 | Previos Voces | 2d | 2009-09-21 | 2009-09-23 | 46 | 2008-11-13 | 2008-11-14 | 2d | 75.72d | 0d |  | Estudio-Audio | 16h |
| 48 | 2.1.6 | Animática | 2d | 2009-09-23 | 2009-09-25 | 47 | 2008-11-17 | 2008-11-18 | 2d | 75.72d | 0d |  | Téc. Edición | 16h |
| 49 | 2.2 | **Producción** | 42d | 2009-09-25 | 2009-11-24 | 48 | 2008-11-19 | 2009-01-14 | 41d | 75.72d |  |  |  | 1772h |
| 50 | 2.2.1 | Diseño de Personajes Secundarios | 3d | 2009-09-25 | 2009-09-30 |  | 2008-11-19 | 2008-11-21 | 3d | 75.72d | 0d |  | Dibujante | 24h |
| 51 | 2.2.2 | Diseño de Fondos y Props | 3d | 2009-09-30 | 2009-10-05 | 50 | 2008-11-24 | 2008-11-26 | 3d | 75.72d | 0d |  | Dibujante | 24h |
| 52 | 2.2.3 | Modelado de Props | 2d | 2009-10-05 | 2009-10-07 | 51 | 2008-11-27 | 2008-11-28 | 2d | 75.72d | 0d |  | Modelador+set-up | 16h |
| 53 | 2.2.4 | Texturizado de Props | 1d | 2009-10-07 | 2009-10-08 | 52 | 2008-11-27 | 2008-11-27 | 1d | 75.72d | 0d |  | Modelador+set-up | 8h |
| 54 | 2.2.5 | Modelado Personajes secundarios y Morfos | 4d | 2009-09-30 | 2009-10-06 | 50 | 2008-11-28 | 2008-12-02 | 3d | 115d | 0d | start no earlier than 2008-11-27 | Modelador+set-up | 32h |
| 55 | 2.2.6 | Texturizado Personajes | 2d | 2009-10-06 | 2009-10-08 | 54 | 2008-11-28 | 2008-12-01 | 2d | 115d |  |  | Modelador+set-up | 16h |
| 56 | 2.2.7 | Rigging Personajes y objetos | 3d | 2009-10-08 | 2009-10-13 | 53 | 2008-12-02 | 2008-12-03 | 2d | 75.72d | 0d |  | Modelador+set-up | 24h |
| 57 | 2.2.8 | Revisión Modelados | 1d | 2009-10-13 | 2009-10-14 | 56 | 2008-12-04 | 2008-12-04 | 1d | 75.72d | 0d |  | director | 8h |
| 58 | 2.2.9 | Lay-outs | 7d | 2009-10-14 | 2009-10-23 | 57 | 2008-12-05 | 2008-12-15 | 7d | 75.72d | 0d |  | Layout | 56h |
| 59 | 2.2.10 | Supervisión | 6d | 2009-10-23 | 2009-11-02 | 58 | 2008-12-16 | 2008-12-23 | 6d | 75.72d | 0d |  | director | 48h |
| 60 | 2.2.11 | Animación | 13d | 2009-11-02 | 2009-11-19 | 59 | 2008-12-24 | 2009-01-09 | 13d | 76d | 0d |  | Animador [1200%] | 1248h |
| 61 | 2.2.12 | <Margen> | 5d | 2009-11-02 | 2009-11-09 | 59 | 2008-12-24 | 2008-12-30 | 5d | 75.72d | 0d |  |  |  |
| 62 | 2.2.13 | Retakes | 2.5d | 2009-11-09 | 2009-11-11 | 61 | 2008-12-31 | 2009-01-02 | 2.5d | 90.5d |  |  | Animador [1200%] | 240h |
| 63 | 2.2.14 | Aprobación Final | 5d | 2009-11-09 | 2009-11-16 | 61 | 2008-12-31 | 2009-01-06 | 5d | 88d |  |  | director [10%] | 4h |
| 64 | 2.2.15 | Animática | 3d | 2009-11-19 | 2009-11-24 | 60 | 2009-01-12 | 2009-01-14 | 3d | 76d | 0d |  | Téc. Edición | 24h |

Notes:
- 29: 20 minutos el fotograma

| ID | WBS | Task | Duration | Start | Finish | Predecessors | Baseline start | Baseline finish | Baseline duration | Total slack | Free slack | Constraint | Resources | Work |
| --- | --- | --- | --- | --- | --- | --- | --- | --- | --- | --- | --- | --- | --- | --- |
| 65 | 2.3 | **Post-producción** | 22.28d | 2009-11-02 | 2009-12-02 | 59 | 2008-12-31 | 2009-01-15 | 11.4d | 75.72d |  |  |  | 968h |
| 66 | 2.3.1 | Lighting | 10d | 2009-11-09 | 2009-11-23 | 61 | 2008-12-31 | 2009-01-13 | 10d | 83d |  |  | Ilum/Render | 80h |
| 67 | 2.3.2 | <Margen> | 1d | 2009-11-09 | 2009-11-10 | 61 | 2008-12-31 | 2008-12-31 | 1d | 75.72d | 0d |  |  |  |
| 68 | 2.3.3 | Rendering | 10.4d | 2009-11-10 | 2009-11-24 | 67 | 2009-01-01 | 2009-01-15 | 10.4d | 75.72d | 0d |  | Granja Render [1000%] | 832h |
| 69 | 2.3.4 | <Margen> | 5.88d | 2009-11-24 | 2009-12-02 | 68 | 2009-01-01 | 2009-01-05 | 3d | 75.72d |  |  |  |  |
| 70 | 2.3.5 | Imagen Master Betacam | 2d | 2009-11-09 | 2009-11-11 | 71 | 2009-01-13 | 2009-01-14 | 2d | 91d |  |  | Estudio Video | 16h |
| 71 | 2.3.6 | Edición y Composición Imagen | 5d | 2009-11-02 | 2009-11-09 |  | 2009-01-06 | 2009-01-12 | 5d | 88d | 0d |  | Téc. Edición | 40h |
| 72 | 2.4 | **Sonido** | 17d | 2009-11-09 | 2009-12-02 | 71 | 2009-01-13 | 2009-01-22 | 8d | 76d |  |  |  | 40h |
| 73 | 2.4.1 | Doblaje | 2d | 2009-11-09 | 2009-11-11 |  | 2009-01-13 | 2009-01-14 | 2d | 88d | 0d |  | Estudio-Audio | 16h |
| 74 | 2.4.2 | Efectos Sonoros | 2d | 2009-11-11 | 2009-11-13 | 73 | 2009-01-15 | 2009-01-16 | 2d | 88d | 12d |  | Estudio-Audio | 16h |
| 75 | 2.4.3 | Masterización | 0.5d | 2009-12-01 | 2009-12-01 | 74, 78 | 2009-01-22 | 2009-01-22 | 0.5d | 76d | 0d |  | Estudio-Audio | 4h |
| 76 | 2.4.4 | Máster Betacam | 0.5d | 2009-12-01 | 2009-12-02 | 75 | 2009-01-22 | 2009-01-22 | 0.5d | 76d |  |  | Estudio-Audio | 4h |
| 77 | 2.5 | Música Esbozo | 10d | 2009-09-25 | 2009-10-09 | 48 | 2008-11-19 | 2008-12-02 | 10d | 108d | 32d |  | Músico | 80h |
| 78 | 2.6 | Música Final | 5d | 2009-11-24 | 2009-12-01 | 64, 77 | 2009-01-15 | 2009-01-21 | 5d | 76d | 0d |  | Músico | 40h |
| 80 | 3 | **Total Producción** | 70d | 2009-09-17 | 2009-12-28 |  | 2008-11-03 | 2009-01-22 | 59d | 60d |  |  | 03 Producción | 3610.04h |
| 81 | 3.1 | **Pre-producción** | 12d | 2009-09-17 | 2009-10-05 |  | 2008-11-03 | 2008-11-18 | 12d | 60d |  |  |  | 128h |
| 82 | 3.1.1 | Guión Técnico | 2d | 2009-09-17 | 2009-09-21 |  | 2008-11-03 | 2008-11-04 | 2d | 60d | 0d | start no earlier than 2009-09-17 | director | 16h |
| 83 | 3.1.2 | Desglose Guión | 1d | 2009-09-21 | 2009-09-22 | 82 | 2008-11-05 | 2008-11-05 | 1d | 60d | 0d |  | Producción | 8h |
| 84 | 3.1.3 | Storyboard | 4d | 2009-09-22 | 2009-09-28 | 83 | 2008-11-06 | 2008-11-11 | 4d | 60d | 0d |  | storyman [200%] | 64h |
| 85 | 3.1.4 | Supervisión | 1d | 2009-09-28 | 2009-09-29 | 84 | 2008-11-12 | 2008-11-12 | 1d | 60d | 0d |  | director | 8h |
| 86 | 3.1.5 | Previos Voces | 2d | 2009-09-29 | 2009-10-01 | 85 | 2008-11-13 | 2008-11-14 | 2d | 60d | 0d |  | Estudio-Audio | 16h |
| 87 | 3.1.6 | Animática | 2d | 2009-10-01 | 2009-10-05 | 86 | 2008-11-17 | 2008-11-18 | 2d | 60d | 0d |  | Téc. Edición | 16h |
| 88 | 3.2 | **Producción** | 42d | 2009-10-05 | 2009-12-02 | 87 | 2008-11-19 | 2009-01-14 | 41d | 60d |  |  |  | 1772h |
| 89 | 3.2.1 | Diseño de Personajes Secundarios | 3d | 2009-10-05 | 2009-10-08 |  | 2008-11-19 | 2008-11-21 | 3d | 60d | 0d |  | Dibujante | 24h |
| 90 | 3.2.2 | Diseño de Fondos y Props | 3d | 2009-10-08 | 2009-10-13 | 89 | 2008-11-24 | 2008-11-26 | 3d | 60d | 0d |  | Dibujante | 24h |
| 91 | 3.2.3 | Modelado de Props | 2d | 2009-10-13 | 2009-10-15 | 90 | 2008-11-27 | 2008-11-28 | 2d | 60d | 0d |  | Modelador+set-up | 16h |
| 92 | 3.2.4 | Texturizado de Props | 1d | 2009-10-15 | 2009-10-16 | 91 | 2008-11-27 | 2008-11-27 | 1d | 60d | 0d |  | Modelador+set-up | 8h |
| 93 | 3.2.5 | Modelado Personajes secundarios y Morfos | 4d | 2009-10-08 | 2009-10-14 | 89 | 2008-11-28 | 2008-12-02 | 3d | 109d | 0d | start no earlier than 2008-11-27 | Modelador+set-up | 32h |
| 94 | 3.2.6 | Texturizado Personajes | 2d | 2009-10-14 | 2009-10-16 | 93 | 2008-11-28 | 2008-12-01 | 2d | 109d |  |  | Modelador+set-up | 16h |
| 95 | 3.2.7 | Rigging Personajes y objetos | 3d | 2009-10-16 | 2009-10-21 | 92 | 2008-12-02 | 2008-12-03 | 2d | 60d | 0d |  | Modelador+set-up | 24h |
| 96 | 3.2.8 | Revisión Modelados | 1d | 2009-10-21 | 2009-10-22 | 95 | 2008-12-04 | 2008-12-04 | 1d | 60d | 0d |  | director | 8h |
| 97 | 3.2.9 | Lay-outs | 7d | 2009-10-22 | 2009-11-02 | 96 | 2008-12-05 | 2008-12-15 | 7d | 60d | 0d |  | Layout | 56h |
| 98 | 3.2.10 | Supervisión | 6d | 2009-11-02 | 2009-11-10 | 97 | 2008-12-16 | 2008-12-23 | 6d | 60d | 0d |  | director | 48h |
| 99 | 3.2.11 | Animación | 13d | 2009-11-10 | 2009-11-27 | 98 | 2008-12-24 | 2009-01-09 | 13d | 70.12d | 0d |  | Animador [1200%] | 1248h |
| 100 | 3.2.12 | <Margen> | 5d | 2009-11-10 | 2009-11-17 | 98 | 2008-12-24 | 2008-12-30 | 5d | 60d | 0d |  |  |  |
| 101 | 3.2.13 | Retakes | 2.5d | 2009-11-17 | 2009-11-19 | 100 | 2008-12-31 | 2009-01-02 | 2.5d | 84.5d |  |  | Animador [1200%] | 240h |
| 102 | 3.2.14 | Aprobación Final | 5d | 2009-11-17 | 2009-11-24 | 100 | 2008-12-31 | 2009-01-06 | 5d | 82d |  |  | director [10%] | 4h |
| 103 | 3.2.15 | Animática | 3d | 2009-11-27 | 2009-12-02 | 99 | 2009-01-12 | 2009-01-14 | 3d | 70.12d | 0d |  | Téc. Edición | 24h |

Notes:
- 68: 20 minutos el fotograma

| ID | WBS | Task | Duration | Start | Finish | Predecessors | Baseline start | Baseline finish | Baseline duration | Total slack | Free slack | Constraint | Resources | Work |
| --- | --- | --- | --- | --- | --- | --- | --- | --- | --- | --- | --- | --- | --- | --- |
| 104 | 3.3 | **Post-producción** | 32d | 2009-11-10 | 2009-12-28 | 98 | 2008-12-31 | 2009-01-15 | 11.4d | 60d |  |  |  | 991h |
| 105 | 3.3.1 | Lighting | 12.88d | 2009-11-17 | 2009-12-28 | 100 | 2008-12-31 | 2009-01-13 | 10d | 60d |  | start no earlier than 2009-10-23 | Ilum/Render | 103h |
| 106 | 3.3.2 | <Margen> | 1d | 2009-11-17 | 2009-11-18 | 100 | 2008-12-31 | 2008-12-31 | 1d | 69.72d | 0d |  |  |  |
| 107 | 3.3.3 | Rendering | 10.4d | 2009-11-18 | 2009-12-02 | 106 | 2009-01-01 | 2009-01-15 | 10.4d | 69.72d | 0d |  | Granja Render [1000%] | 832h |
| 108 | 3.3.4 | <Margen> | 5.88d | 2009-12-02 | 2009-12-10 | 107 | 2009-01-01 | 2009-01-05 | 3d | 69.72d |  |  |  |  |
| 109 | 3.3.5 | Imagen Master Betacam | 2d | 2009-11-17 | 2009-11-19 | 110 | 2009-01-13 | 2009-01-14 | 2d | 85d |  |  | Estudio Video | 16h |
| 110 | 3.3.6 | Edición y Composición Imagen | 5d | 2009-11-10 | 2009-11-17 |  | 2009-01-06 | 2009-01-12 | 5d | 82.12d | 0d |  | Téc. Edición | 40h |
| 111 | 3.4 | **Sonido** | 16.88d | 2009-11-17 | 2009-12-10 | 110 | 2009-01-13 | 2009-01-22 | 8d | 70.12d |  |  |  | 39.04h |
| 112 | 3.4.1 | Doblaje | 2d | 2009-11-17 | 2009-11-19 |  | 2009-01-13 | 2009-01-14 | 2d | 82.12d | 0d |  | Estudio-Audio | 16h |
| 113 | 3.4.2 | Efectos Sonoros | 2d | 2009-11-19 | 2009-11-23 | 112 | 2009-01-15 | 2009-01-16 | 2d | 82.12d | 12d |  | Estudio-Audio | 16h |
| 114 | 3.4.3 | Masterización | 0.38d | 2009-12-09 | 2009-12-09 | 113, 117 | 2009-01-22 | 2009-01-22 | 0.5d | 70.12d | 0d |  | Estudio-Audio | 3.04h |
| 115 | 3.4.4 | Máster Betacam | 0.5d | 2009-12-09 | 2009-12-10 | 114 | 2009-01-22 | 2009-01-22 | 0.5d | 70.12d |  |  | Estudio-Audio | 4h |
| 116 | 3.5 | Música Esbozo | 10d | 2009-10-05 | 2009-10-19 | 87 | 2008-11-19 | 2008-12-02 | 10d | 102.12d | 32d |  | Músico | 80h |
| 117 | 3.6 | Música Final | 5d | 2009-12-02 | 2009-12-09 | 103, 116 | 2009-01-15 | 2009-01-21 | 5d | 70.12d | 0d |  | Músico | 40h |
| 119 | 4 | **Total Producción** | 60.28d | 2009-09-25 | 2009-12-18 |  | 2008-11-03 | 2009-01-22 | 59d | 63.72d |  |  | 04 Producción | 3510.24h |
| 120 | 4.1 | **Pre-producción** | 12d | 2009-09-25 | 2009-10-13 |  | 2008-11-03 | 2008-11-18 | 12d | 63.72d |  |  |  | 128h |
| 121 | 4.1.1 | Guión Técnico | 2d | 2009-09-25 | 2009-09-29 |  | 2008-11-03 | 2008-11-04 | 2d | 63.72d | 0d | start no earlier than 2009-09-25 | director | 16h |
| 122 | 4.1.2 | Desglose Guión | 1d | 2009-09-29 | 2009-09-30 | 121 | 2008-11-05 | 2008-11-05 | 1d | 63.72d | 0d |  | Producción | 8h |
| 123 | 4.1.3 | Storyboard | 4d | 2009-09-30 | 2009-10-06 | 122 | 2008-11-06 | 2008-11-11 | 4d | 63.72d | 0d |  | storyman [200%] | 64h |
| 124 | 4.1.4 | Supervisión | 1d | 2009-10-06 | 2009-10-07 | 123 | 2008-11-12 | 2008-11-12 | 1d | 63.72d | 0d |  | director | 8h |
| 125 | 4.1.5 | Previos Voces | 2d | 2009-10-07 | 2009-10-09 | 124 | 2008-11-13 | 2008-11-14 | 2d | 63.72d | 0d |  | Estudio-Audio | 16h |
| 126 | 4.1.6 | Animática | 2d | 2009-10-09 | 2009-10-13 | 125 | 2008-11-17 | 2008-11-18 | 2d | 63.72d | 0d |  | Téc. Edición | 16h |
| 127 | 4.2 | **Producción** | 42d | 2009-10-13 | 2009-12-10 | 126 | 2008-11-19 | 2009-01-14 | 41d | 63.72d |  |  |  | 1772h |
| 128 | 4.2.1 | Diseño de Personajes Secundarios | 3d | 2009-10-13 | 2009-10-16 |  | 2008-11-19 | 2008-11-21 | 3d | 63.72d | 0d |  | Dibujante | 24h |
| 129 | 4.2.2 | Diseño de Fondos y Props | 3d | 2009-10-16 | 2009-10-21 | 128 | 2008-11-24 | 2008-11-26 | 3d | 63.72d | 0d |  | Dibujante | 24h |
| 130 | 4.2.3 | Modelado de Props | 2d | 2009-10-21 | 2009-10-23 | 129 | 2008-11-27 | 2008-11-28 | 2d | 63.72d | 0d |  | Modelador+set-up | 16h |
| 131 | 4.2.4 | Texturizado de Props | 1d | 2009-10-23 | 2009-10-26 | 130 | 2008-11-27 | 2008-11-27 | 1d | 63.72d | 0d |  | Modelador+set-up | 8h |
| 132 | 4.2.5 | Modelado Personajes secundarios y Morfos | 4d | 2009-10-16 | 2009-10-22 | 128 | 2008-11-28 | 2008-12-02 | 3d | 103d | 0d | start no earlier than 2008-11-27 | Modelador+set-up | 32h |
| 133 | 4.2.6 | Texturizado Personajes | 2d | 2009-10-22 | 2009-10-26 | 132 | 2008-11-28 | 2008-12-01 | 2d | 103d |  |  | Modelador+set-up | 16h |
| 134 | 4.2.7 | Rigging Personajes y objetos | 3d | 2009-10-26 | 2009-10-29 | 131 | 2008-12-02 | 2008-12-03 | 2d | 63.72d | 0d |  | Modelador+set-up | 24h |
| 135 | 4.2.8 | Revisión Modelados | 1d | 2009-10-29 | 2009-10-30 | 134 | 2008-12-04 | 2008-12-04 | 1d | 63.72d | 0d |  | director | 8h |
| 136 | 4.2.9 | Lay-outs | 7d | 2009-10-30 | 2009-11-10 | 135 | 2008-12-05 | 2008-12-15 | 7d | 63.72d | 0d |  | Layout | 56h |
| 137 | 4.2.10 | Supervisión | 6d | 2009-11-10 | 2009-11-18 | 136 | 2008-12-16 | 2008-12-23 | 6d | 63.72d | 0d |  | director | 48h |
| 138 | 4.2.11 | Animación | 13d | 2009-11-18 | 2009-12-07 | 137 | 2008-12-24 | 2009-01-09 | 13d | 64d | 0d |  | Animador [1200%] | 1248h |
| 139 | 4.2.12 | <Margen> | 5d | 2009-11-18 | 2009-11-25 | 137 | 2008-12-24 | 2008-12-30 | 5d | 63.72d | 0d |  |  |  |
| 140 | 4.2.13 | Retakes | 2.5d | 2009-11-25 | 2009-11-27 | 139 | 2008-12-31 | 2009-01-02 | 2.5d | 78.5d |  |  | Animador [1200%] | 240h |
| 141 | 4.2.14 | Aprobación Final | 5d | 2009-11-25 | 2009-12-02 | 139 | 2008-12-31 | 2009-01-06 | 5d | 76d |  |  | director [10%] | 4h |
| 142 | 4.2.15 | Animática | 3d | 2009-12-07 | 2009-12-10 | 138 | 2009-01-12 | 2009-01-14 | 3d | 64d | 0d |  | Téc. Edición | 24h |

Notes:
- 107: 20 minutos el fotograma

| ID | WBS | Task | Duration | Start | Finish | Predecessors | Baseline start | Baseline finish | Baseline duration | Total slack | Free slack | Constraint | Resources | Work |
| --- | --- | --- | --- | --- | --- | --- | --- | --- | --- | --- | --- | --- | --- | --- |
| 143 | 4.3 | **Post-producción** | 22.28d | 2009-11-18 | 2009-12-18 | 137 | 2008-12-31 | 2009-01-15 | 11.4d | 63.72d |  |  |  | 968h |
| 144 | 4.3.1 | Lighting | 10d | 2009-11-25 | 2009-12-09 | 139 | 2008-12-31 | 2009-01-13 | 10d | 71d |  |  | Ilum/Render | 80h |
| 145 | 4.3.2 | <Margen> | 1d | 2009-11-25 | 2009-11-26 | 139 | 2008-12-31 | 2008-12-31 | 1d | 63.72d | 0d |  |  |  |
| 146 | 4.3.3 | Rendering | 10.4d | 2009-11-26 | 2009-12-10 | 145 | 2009-01-01 | 2009-01-15 | 10.4d | 63.72d | 0d |  | Granja Render [1000%] | 832h |
| 147 | 4.3.4 | <Margen> | 5.88d | 2009-12-10 | 2009-12-18 | 146 | 2009-01-01 | 2009-01-05 | 3d | 63.72d |  |  |  |  |
| 148 | 4.3.5 | Imagen Master Betacam | 2d | 2009-11-25 | 2009-11-27 | 149 | 2009-01-13 | 2009-01-14 | 2d | 79d |  |  | Estudio Video | 16h |
| 149 | 4.3.6 | Edición y Composición Imagen | 5d | 2009-11-18 | 2009-11-25 |  | 2009-01-06 | 2009-01-12 | 5d | 76d | 0d |  | Téc. Edición | 40h |
| 150 | 4.4 | **Sonido** | 17d | 2009-11-25 | 2009-12-18 | 149 | 2009-01-13 | 2009-01-22 | 8d | 64d |  |  |  | 40h |
| 151 | 4.4.1 | Doblaje | 2d | 2009-11-25 | 2009-11-27 |  | 2009-01-13 | 2009-01-14 | 2d | 76d | 0d |  | Estudio-Audio | 16h |
| 152 | 4.4.2 | Efectos Sonoros | 2d | 2009-11-27 | 2009-12-01 | 151 | 2009-01-15 | 2009-01-16 | 2d | 76d | 12d |  | Estudio-Audio | 16h |
| 153 | 4.4.3 | Masterización | 0.5d | 2009-12-17 | 2009-12-17 | 152, 156 | 2009-01-22 | 2009-01-22 | 0.5d | 64d | 0d |  | Estudio-Audio | 4h |
| 154 | 4.4.4 | Máster Betacam | 0.5d | 2009-12-17 | 2009-12-18 | 153 | 2009-01-22 | 2009-01-22 | 0.5d | 64d |  |  | Estudio-Audio | 4h |
| 155 | 4.5 | Música Esbozo | 10d | 2009-10-13 | 2009-10-27 | 126 | 2008-11-19 | 2008-12-02 | 10d | 96d | 32d |  | Músico | 80h |
| 156 | 4.6 | Música Final | 5d | 2009-12-10 | 2009-12-17 | 142, 155 | 2009-01-15 | 2009-01-21 | 5d | 64d | 0d |  | Músico | 40h |
| 158 | 5 | **Total Producción** | 60.28d | 2009-10-05 | 2009-12-30 |  | 2008-11-03 | 2009-01-22 | 59d | 57.72d |  |  | 05 Producción | 3510.24h |
| 159 | 5.1 | **Pre-producción** | 12d | 2009-10-05 | 2009-10-21 |  | 2008-11-03 | 2008-11-18 | 12d | 57.72d |  |  |  | 128h |
| 160 | 5.1.1 | Guión Técnico | 2d | 2009-10-05 | 2009-10-07 |  | 2008-11-03 | 2008-11-04 | 2d | 57.72d | 0d | start no earlier than 2009-10-05 | director | 16h |
| 161 | 5.1.2 | Desglose Guión | 1d | 2009-10-07 | 2009-10-08 | 160 | 2008-11-05 | 2008-11-05 | 1d | 57.72d | 0d |  | Producción | 8h |
| 162 | 5.1.3 | Storyboard | 4d | 2009-10-08 | 2009-10-14 | 161 | 2008-11-06 | 2008-11-11 | 4d | 57.72d | 0d |  | storyman [200%] | 64h |
| 163 | 5.1.4 | Supervisión | 1d | 2009-10-14 | 2009-10-15 | 162 | 2008-11-12 | 2008-11-12 | 1d | 57.72d | 0d |  | director | 8h |
| 164 | 5.1.5 | Previos Voces | 2d | 2009-10-15 | 2009-10-19 | 163 | 2008-11-13 | 2008-11-14 | 2d | 57.72d | 0d |  | Estudio-Audio | 16h |
| 165 | 5.1.6 | Animática | 2d | 2009-10-19 | 2009-10-21 | 164 | 2008-11-17 | 2008-11-18 | 2d | 57.72d | 0d |  | Téc. Edición | 16h |
| 166 | 5.2 | **Producción** | 42d | 2009-10-21 | 2009-12-18 | 165 | 2008-11-19 | 2009-01-14 | 41d | 57.72d |  |  |  | 1772h |
| 167 | 5.2.1 | Diseño de Personajes Secundarios | 3d | 2009-10-21 | 2009-10-26 |  | 2008-11-19 | 2008-11-21 | 3d | 57.72d | 0d |  | Dibujante | 24h |
| 168 | 5.2.2 | Diseño de Fondos y Props | 3d | 2009-10-26 | 2009-10-29 | 167 | 2008-11-24 | 2008-11-26 | 3d | 57.72d | 0d |  | Dibujante | 24h |
| 169 | 5.2.3 | Modelado de Props | 2d | 2009-10-29 | 2009-11-02 | 168 | 2008-11-27 | 2008-11-28 | 2d | 57.72d | 0d |  | Modelador+set-up | 16h |
| 170 | 5.2.4 | Texturizado de Props | 1d | 2009-11-02 | 2009-11-03 | 169 | 2008-11-27 | 2008-11-27 | 1d | 57.72d | 0d |  | Modelador+set-up | 8h |
| 171 | 5.2.5 | Modelado Personajes secundarios y Morfos | 4d | 2009-10-26 | 2009-10-30 | 167 | 2008-11-28 | 2008-12-02 | 3d | 97d | 0d | start no earlier than 2008-11-27 | Modelador+set-up | 32h |
| 172 | 5.2.6 | Texturizado Personajes | 2d | 2009-10-30 | 2009-11-03 | 171 | 2008-11-28 | 2008-12-01 | 2d | 97d |  |  | Modelador+set-up | 16h |
| 173 | 5.2.7 | Rigging Personajes y objetos | 3d | 2009-11-03 | 2009-11-06 | 170 | 2008-12-02 | 2008-12-03 | 2d | 57.72d | 0d |  | Modelador+set-up | 24h |
| 174 | 5.2.8 | Revisión Modelados | 1d | 2009-11-06 | 2009-11-09 | 173 | 2008-12-04 | 2008-12-04 | 1d | 57.72d | 0d |  | director | 8h |
| 175 | 5.2.9 | Lay-outs | 7d | 2009-11-09 | 2009-11-18 | 174 | 2008-12-05 | 2008-12-15 | 7d | 57.72d | 0d |  | Layout | 56h |
| 176 | 5.2.10 | Supervisión | 6d | 2009-11-18 | 2009-11-26 | 175 | 2008-12-16 | 2008-12-23 | 6d | 57.72d | 0d |  | director | 48h |
| 177 | 5.2.11 | Animación | 13d | 2009-11-26 | 2009-12-15 | 176 | 2008-12-24 | 2009-01-09 | 13d | 58d | 0d |  | Animador [1200%] | 1248h |
| 178 | 5.2.12 | <Margen> | 5d | 2009-11-26 | 2009-12-03 | 176 | 2008-12-24 | 2008-12-30 | 5d | 57.72d | 0d |  |  |  |
| 179 | 5.2.13 | Retakes | 2.5d | 2009-12-03 | 2009-12-07 | 178 | 2008-12-31 | 2009-01-02 | 2.5d | 72.5d |  |  | Animador [1200%] | 240h |
| 180 | 5.2.14 | Aprobación Final | 5d | 2009-12-03 | 2009-12-10 | 178 | 2008-12-31 | 2009-01-06 | 5d | 70d |  |  | director [10%] | 4h |
| 181 | 5.2.15 | Animática | 3d | 2009-12-15 | 2009-12-18 | 177 | 2009-01-12 | 2009-01-14 | 3d | 58d | 0d |  | Téc. Edición | 24h |

Notes:
- 146: 20 minutos el fotograma

| ID | WBS | Task | Duration | Start | Finish | Predecessors | Baseline start | Baseline finish | Baseline duration | Total slack | Free slack | Constraint | Resources | Work |
| --- | --- | --- | --- | --- | --- | --- | --- | --- | --- | --- | --- | --- | --- | --- |
| 182 | 5.3 | **Post-producción** | 22.28d | 2009-11-26 | 2009-12-30 | 176 | 2008-12-31 | 2009-01-15 | 11.4d | 57.72d |  |  |  | 968h |
| 183 | 5.3.1 | Lighting | 10d | 2009-12-03 | 2009-12-17 | 178 | 2008-12-31 | 2009-01-13 | 10d | 65d |  |  | Ilum/Render | 80h |
| 184 | 5.3.2 | <Margen> | 1d | 2009-12-03 | 2009-12-04 | 178 | 2008-12-31 | 2008-12-31 | 1d | 57.72d | 0d |  |  |  |
| 185 | 5.3.3 | Rendering | 10.4d | 2009-12-04 | 2009-12-18 | 184 | 2009-01-01 | 2009-01-15 | 10.4d | 57.72d | 0d |  | Granja Render [1000%] | 832h |
| 186 | 5.3.4 | <Margen> | 5.88d | 2009-12-18 | 2009-12-30 | 185 | 2009-01-01 | 2009-01-05 | 3d | 57.72d |  |  |  |  |
| 187 | 5.3.5 | Imagen Master Betacam | 2d | 2009-12-03 | 2009-12-07 | 188 | 2009-01-13 | 2009-01-14 | 2d | 73d |  |  | Estudio Video | 16h |
| 188 | 5.3.6 | Edición y Composición Imagen | 5d | 2009-11-26 | 2009-12-03 |  | 2009-01-06 | 2009-01-12 | 5d | 70d | 0d |  | Téc. Edición | 40h |
| 189 | 5.4 | **Sonido** | 17d | 2009-12-03 | 2009-12-30 | 188 | 2009-01-13 | 2009-01-22 | 8d | 58d |  |  |  | 40h |
| 190 | 5.4.1 | Doblaje | 2d | 2009-12-03 | 2009-12-07 |  | 2009-01-13 | 2009-01-14 | 2d | 70d | 0d |  | Estudio-Audio | 16h |
| 191 | 5.4.2 | Efectos Sonoros | 2d | 2009-12-07 | 2009-12-09 | 190 | 2009-01-15 | 2009-01-16 | 2d | 70d | 12d |  | Estudio-Audio | 16h |
| 192 | 5.4.3 | Masterización | 0.5d | 2009-12-29 | 2009-12-29 | 191, 195 | 2009-01-22 | 2009-01-22 | 0.5d | 58d | 0d |  | Estudio-Audio | 4h |
| 193 | 5.4.4 | Máster Betacam | 0.5d | 2009-12-29 | 2009-12-30 | 192 | 2009-01-22 | 2009-01-22 | 0.5d | 58d |  |  | Estudio-Audio | 4h |
| 194 | 5.5 | Música Esbozo | 10d | 2009-10-21 | 2009-11-04 | 165 | 2008-11-19 | 2008-12-02 | 10d | 90d | 32d |  | Músico | 80h |
| 195 | 5.6 | Música Final | 5d | 2009-12-18 | 2009-12-29 | 181, 194 | 2009-01-15 | 2009-01-21 | 5d | 58d | 0d |  | Músico | 40h |
| 197 | 6 | **Total Producción** | 70d | 2009-10-13 | 2010-01-26 |  | 2008-11-03 | 2009-01-22 | 59d | 42d |  |  | 06 Producción | 3610.03h |
| 198 | 6.1 | **Pre-producción** | 12d | 2009-10-13 | 2009-10-29 |  | 2008-11-03 | 2008-11-18 | 12d | 42d |  |  |  | 128h |
| 199 | 6.1.1 | Guión Técnico | 2d | 2009-10-13 | 2009-10-15 |  | 2008-11-03 | 2008-11-04 | 2d | 42d | 0d | start no earlier than 2009-10-13 | director | 16h |
| 200 | 6.1.2 | Desglose Guión | 1d | 2009-10-15 | 2009-10-16 | 199 | 2008-11-05 | 2008-11-05 | 1d | 42d | 0d |  | Producción | 8h |
| 201 | 6.1.3 | Storyboard | 4d | 2009-10-16 | 2009-10-22 | 200 | 2008-11-06 | 2008-11-11 | 4d | 42d | 0d |  | storyman [200%] | 64h |
| 202 | 6.1.4 | Supervisión | 1d | 2009-10-22 | 2009-10-23 | 201 | 2008-11-12 | 2008-11-12 | 1d | 42d | 0d |  | director | 8h |
| 203 | 6.1.5 | Previos Voces | 2d | 2009-10-23 | 2009-10-27 | 202 | 2008-11-13 | 2008-11-14 | 2d | 42d | 0d |  | Estudio-Audio | 16h |
| 204 | 6.1.6 | Animática | 2d | 2009-10-27 | 2009-10-29 | 203 | 2008-11-17 | 2008-11-18 | 2d | 42d | 0d |  | Téc. Edición | 16h |
| 205 | 6.2 | **Producción** | 42d | 2009-10-29 | 2009-12-30 | 204 | 2008-11-19 | 2009-01-14 | 41d | 42d |  |  |  | 1772h |
| 206 | 6.2.1 | Diseño de Personajes Secundarios | 3d | 2009-10-29 | 2009-11-03 |  | 2008-11-19 | 2008-11-21 | 3d | 42d | 0d |  | Dibujante | 24h |
| 207 | 6.2.2 | Diseño de Fondos y Props | 3d | 2009-11-03 | 2009-11-06 | 206 | 2008-11-24 | 2008-11-26 | 3d | 42d | 0d |  | Dibujante | 24h |
| 208 | 6.2.3 | Modelado de Props | 2d | 2009-11-06 | 2009-11-10 | 207 | 2008-11-27 | 2008-11-28 | 2d | 42d | 0d |  | Modelador+set-up | 16h |
| 209 | 6.2.4 | Texturizado de Props | 1d | 2009-11-10 | 2009-11-11 | 208 | 2008-11-27 | 2008-11-27 | 1d | 42d | 0d |  | Modelador+set-up | 8h |
| 210 | 6.2.5 | Modelado Personajes secundarios y Morfos | 4d | 2009-11-03 | 2009-11-09 | 206 | 2008-11-28 | 2008-12-02 | 3d | 91d | 0d | start no earlier than 2008-11-27 | Modelador+set-up | 32h |
| 211 | 6.2.6 | Texturizado Personajes | 2d | 2009-11-09 | 2009-11-11 | 210 | 2008-11-28 | 2008-12-01 | 2d | 91d |  |  | Modelador+set-up | 16h |
| 212 | 6.2.7 | Rigging Personajes y objetos | 3d | 2009-11-11 | 2009-11-16 | 209 | 2008-12-02 | 2008-12-03 | 2d | 42d | 0d |  | Modelador+set-up | 24h |
| 213 | 6.2.8 | Revisión Modelados | 1d | 2009-11-16 | 2009-11-17 | 212 | 2008-12-04 | 2008-12-04 | 1d | 42d | 0d |  | director | 8h |
| 214 | 6.2.9 | Lay-outs | 7d | 2009-11-17 | 2009-11-26 | 213 | 2008-12-05 | 2008-12-15 | 7d | 42d | 0d |  | Layout | 56h |
| 215 | 6.2.10 | Supervisión | 6d | 2009-11-26 | 2009-12-04 | 214 | 2008-12-16 | 2008-12-23 | 6d | 42d | 0d |  | director | 48h |
| 216 | 6.2.11 | Animación | 13d | 2009-12-04 | 2009-12-23 | 215 | 2008-12-24 | 2009-01-09 | 13d | 52.12d | 0d |  | Animador [1200%] | 1248h |
| 217 | 6.2.12 | <Margen> | 5d | 2009-12-04 | 2009-12-11 | 215 | 2008-12-24 | 2008-12-30 | 5d | 42d | 0d |  |  |  |
| 218 | 6.2.13 | Retakes | 2.5d | 2009-12-11 | 2009-12-15 | 217 | 2008-12-31 | 2009-01-02 | 2.5d | 66.5d |  |  | Animador [1200%] | 240h |
| 219 | 6.2.14 | Aprobación Final | 5d | 2009-12-11 | 2009-12-18 | 217 | 2008-12-31 | 2009-01-06 | 5d | 64d |  |  | director [10%] | 4h |
| 220 | 6.2.15 | Animática | 3d | 2009-12-23 | 2009-12-30 | 216 | 2009-01-12 | 2009-01-14 | 3d | 52.12d | 0d |  | Téc. Edición | 24h |

Notes:
- 185: 20 minutos el fotograma

| ID | WBS | Task | Duration | Start | Finish | Predecessors | Baseline start | Baseline finish | Baseline duration | Total slack | Free slack | Constraint | Resources | Work |
| --- | --- | --- | --- | --- | --- | --- | --- | --- | --- | --- | --- | --- | --- | --- |
| 221 | 6.3 | **Post-producción** | 32d | 2009-12-04 | 2010-01-26 | 215 | 2008-12-31 | 2009-01-15 | 11.4d | 42d |  |  |  | 991h |
| 222 | 6.3.1 | Lighting | 12.88d | 2009-12-11 | 2010-01-26 | 217 | 2008-12-31 | 2009-01-13 | 10d | 42d |  | start no earlier than 2009-10-23 | Ilum/Render | 103h |
| 223 | 6.3.2 | <Margen> | 1d | 2009-12-11 | 2009-12-14 | 217 | 2008-12-31 | 2008-12-31 | 1d | 51.72d | 0d |  |  |  |
| 224 | 6.3.3 | Rendering | 10.4d | 2009-12-14 | 2009-12-30 | 223 | 2009-01-01 | 2009-01-15 | 10.4d | 51.72d | 0d |  | Granja Render [1000%] | 832h |
| 225 | 6.3.4 | <Margen> | 5.88d | 2009-12-30 | 2010-01-12 | 224 | 2009-01-01 | 2009-01-05 | 3d | 51.72d |  |  |  |  |
| 226 | 6.3.5 | Imagen Master Betacam | 2d | 2009-12-11 | 2009-12-15 | 227 | 2009-01-13 | 2009-01-14 | 2d | 67d |  |  | Estudio Video | 16h |
| 227 | 6.3.6 | Edición y Composición Imagen | 5d | 2009-12-04 | 2009-12-11 |  | 2009-01-06 | 2009-01-12 | 5d | 64.12d | 0d |  | Téc. Edición | 40h |
| 228 | 6.4 | **Sonido** | 16.88d | 2009-12-11 | 2010-01-12 | 227 | 2009-01-13 | 2009-01-22 | 8d | 52.12d |  |  |  | 39.03h |
| 229 | 6.4.1 | Doblaje | 2d | 2009-12-11 | 2009-12-15 |  | 2009-01-13 | 2009-01-14 | 2d | 64.12d | 0d |  | Estudio-Audio | 16h |
| 230 | 6.4.2 | Efectos Sonoros | 2d | 2009-12-15 | 2009-12-17 | 229 | 2009-01-15 | 2009-01-16 | 2d | 64.12d | 12d |  | Estudio-Audio | 16h |
| 231 | 6.4.3 | Masterización | 0.38d | 2010-01-11 | 2010-01-11 | 230, 234 | 2009-01-22 | 2009-01-22 | 0.5d | 52.12d | 0d |  | Estudio-Audio | 3.03h |
| 232 | 6.4.4 | Máster Betacam | 0.5d | 2010-01-11 | 2010-01-12 | 231 | 2009-01-22 | 2009-01-22 | 0.5d | 52.12d |  |  | Estudio-Audio | 4h |
| 233 | 6.5 | Música Esbozo | 10d | 2009-10-29 | 2009-11-12 | 204 | 2008-11-19 | 2008-12-02 | 10d | 84.12d | 32d |  | Músico | 80h |
| 234 | 6.6 | Música Final | 5d | 2009-12-30 | 2010-01-11 | 220, 233 | 2009-01-15 | 2009-01-21 | 5d | 52.12d | 0d |  | Músico | 40h |
| 236 | 7 | **Total Producción** | 60.28d | 2009-10-21 | 2010-01-20 |  | 2008-11-03 | 2009-01-22 | 59d | 45.72d |  |  | 07 Producción | 3510.24h |
| 237 | 7.1 | **Pre-producción** | 12d | 2009-10-21 | 2009-11-06 |  | 2008-11-03 | 2008-11-18 | 12d | 45.72d |  |  |  | 128h |
| 238 | 7.1.1 | Guión Técnico | 2d | 2009-10-21 | 2009-10-23 |  | 2008-11-03 | 2008-11-04 | 2d | 45.72d | 0d | start no earlier than 2009-10-21 | director | 16h |
| 239 | 7.1.2 | Desglose Guión | 1d | 2009-10-23 | 2009-10-26 | 238 | 2008-11-05 | 2008-11-05 | 1d | 45.72d | 0d |  | Producción | 8h |
| 240 | 7.1.3 | Storyboard | 4d | 2009-10-26 | 2009-10-30 | 239 | 2008-11-06 | 2008-11-11 | 4d | 45.72d | 0d |  | storyman [200%] | 64h |
| 241 | 7.1.4 | Supervisión | 1d | 2009-10-30 | 2009-11-02 | 240 | 2008-11-12 | 2008-11-12 | 1d | 45.72d | 0d |  | director | 8h |
| 242 | 7.1.5 | Previos Voces | 2d | 2009-11-02 | 2009-11-04 | 241 | 2008-11-13 | 2008-11-14 | 2d | 45.72d | 0d |  | Estudio-Audio | 16h |
| 243 | 7.1.6 | Animática | 2d | 2009-11-04 | 2009-11-06 | 242 | 2008-11-17 | 2008-11-18 | 2d | 45.72d | 0d |  | Téc. Edición | 16h |
| 244 | 7.2 | **Producción** | 42d | 2009-11-06 | 2010-01-12 | 243 | 2008-11-19 | 2009-01-14 | 41d | 45.72d |  |  |  | 1772h |
| 245 | 7.2.1 | Diseño de Personajes Secundarios | 3d | 2009-11-06 | 2009-11-11 |  | 2008-11-19 | 2008-11-21 | 3d | 45.72d | 0d |  | Dibujante | 24h |
| 246 | 7.2.2 | Diseño de Fondos y Props | 3d | 2009-11-11 | 2009-11-16 | 245 | 2008-11-24 | 2008-11-26 | 3d | 45.72d | 0d |  | Dibujante | 24h |
| 247 | 7.2.3 | Modelado de Props | 2d | 2009-11-16 | 2009-11-18 | 246 | 2008-11-27 | 2008-11-28 | 2d | 45.72d | 0d |  | Modelador+set-up | 16h |
| 248 | 7.2.4 | Texturizado de Props | 1d | 2009-11-18 | 2009-11-19 | 247 | 2008-11-27 | 2008-11-27 | 1d | 45.72d | 0d |  | Modelador+set-up | 8h |
| 249 | 7.2.5 | Modelado Personajes secundarios y Morfos | 4d | 2009-11-11 | 2009-11-17 | 245 | 2008-11-28 | 2008-12-02 | 3d | 85d | 0d | start no earlier than 2008-11-27 | Modelador+set-up | 32h |
| 250 | 7.2.6 | Texturizado Personajes | 2d | 2009-11-17 | 2009-11-19 | 249 | 2008-11-28 | 2008-12-01 | 2d | 85d |  |  | Modelador+set-up | 16h |
| 251 | 7.2.7 | Rigging Personajes y objetos | 3d | 2009-11-19 | 2009-11-24 | 248 | 2008-12-02 | 2008-12-03 | 2d | 45.72d | 0d |  | Modelador+set-up | 24h |
| 252 | 7.2.8 | Revisión Modelados | 1d | 2009-11-24 | 2009-11-25 | 251 | 2008-12-04 | 2008-12-04 | 1d | 45.72d | 0d |  | director | 8h |
| 253 | 7.2.9 | Lay-outs | 7d | 2009-11-25 | 2009-12-04 | 252 | 2008-12-05 | 2008-12-15 | 7d | 45.72d | 0d |  | Layout | 56h |
| 254 | 7.2.10 | Supervisión | 6d | 2009-12-04 | 2009-12-14 | 253 | 2008-12-16 | 2008-12-23 | 6d | 45.72d | 0d |  | director | 48h |
| 255 | 7.2.11 | Animación | 13d | 2009-12-14 | 2010-01-07 | 254 | 2008-12-24 | 2009-01-09 | 13d | 46d | 0d |  | Animador [1200%] | 1248h |
| 256 | 7.2.12 | <Margen> | 5d | 2009-12-14 | 2009-12-21 | 254 | 2008-12-24 | 2008-12-30 | 5d | 45.72d | 0d |  |  |  |
| 257 | 7.2.13 | Retakes | 2.5d | 2009-12-21 | 2009-12-23 | 256 | 2008-12-31 | 2009-01-02 | 2.5d | 60.5d |  |  | Animador [1200%] | 240h |
| 258 | 7.2.14 | Aprobación Final | 5d | 2009-12-21 | 2009-12-30 | 256 | 2008-12-31 | 2009-01-06 | 5d | 58d |  |  | director [10%] | 4h |
| 259 | 7.2.15 | Animática | 3d | 2010-01-07 | 2010-01-12 | 255 | 2009-01-12 | 2009-01-14 | 3d | 46d | 0d |  | Téc. Edición | 24h |

Notes:
- 224: 20 minutos el fotograma

| ID | WBS | Task | Duration | Start | Finish | Predecessors | Baseline start | Baseline finish | Baseline duration | Total slack | Free slack | Constraint | Resources | Work |
| --- | --- | --- | --- | --- | --- | --- | --- | --- | --- | --- | --- | --- | --- | --- |
| 260 | 7.3 | **Post-producción** | 22.28d | 2009-12-14 | 2010-01-20 | 254 | 2008-12-31 | 2009-01-15 | 11.4d | 45.72d |  |  |  | 968h |
| 261 | 7.3.1 | Lighting | 10d | 2009-12-21 | 2010-01-11 | 256 | 2008-12-31 | 2009-01-13 | 10d | 53d |  |  | Ilum/Render | 80h |
| 262 | 7.3.2 | <Margen> | 1d | 2009-12-21 | 2009-12-22 | 256 | 2008-12-31 | 2008-12-31 | 1d | 45.72d | 0d |  |  |  |
| 263 | 7.3.3 | Rendering | 10.4d | 2009-12-22 | 2010-01-12 | 262 | 2009-01-01 | 2009-01-15 | 10.4d | 45.72d | 0d |  | Granja Render [1000%] | 832h |
| 264 | 7.3.4 | <Margen> | 5.88d | 2010-01-12 | 2010-01-20 | 263 | 2009-01-01 | 2009-01-05 | 3d | 45.72d |  |  |  |  |
| 265 | 7.3.5 | Imagen Master Betacam | 2d | 2009-12-21 | 2009-12-23 | 266 | 2009-01-13 | 2009-01-14 | 2d | 61d |  |  | Estudio Video | 16h |
| 266 | 7.3.6 | Edición y Composición Imagen | 5d | 2009-12-14 | 2009-12-21 |  | 2009-01-06 | 2009-01-12 | 5d | 58d | 0d |  | Téc. Edición | 40h |
| 267 | 7.4 | **Sonido** | 17d | 2009-12-21 | 2010-01-20 | 266 | 2009-01-13 | 2009-01-22 | 8d | 46d |  |  |  | 40h |
| 268 | 7.4.1 | Doblaje | 2d | 2009-12-21 | 2009-12-23 |  | 2009-01-13 | 2009-01-14 | 2d | 58d | 0d |  | Estudio-Audio | 16h |
| 269 | 7.4.2 | Efectos Sonoros | 2d | 2009-12-23 | 2009-12-29 | 268 | 2009-01-15 | 2009-01-16 | 2d | 58d | 12d |  | Estudio-Audio | 16h |
| 270 | 7.4.3 | Masterización | 0.5d | 2010-01-19 | 2010-01-19 | 269, 273 | 2009-01-22 | 2009-01-22 | 0.5d | 46d | 0d |  | Estudio-Audio | 4h |
| 271 | 7.4.4 | Máster Betacam | 0.5d | 2010-01-19 | 2010-01-20 | 270 | 2009-01-22 | 2009-01-22 | 0.5d | 46d |  |  | Estudio-Audio | 4h |
| 272 | 7.5 | Música Esbozo | 10d | 2009-11-06 | 2009-11-20 | 243 | 2008-11-19 | 2008-12-02 | 10d | 78d | 32d |  | Músico | 80h |
| 273 | 7.6 | Música Final | 5d | 2010-01-12 | 2010-01-19 | 259, 272 | 2009-01-15 | 2009-01-21 | 5d | 46d | 0d |  | Músico | 40h |
| 275 | 8 | **Total Producción** | 60.28d | 2009-10-29 | 2010-01-28 |  | 2008-11-03 | 2009-01-22 | 59d | 39.72d |  |  | 08 Producción | 3510.24h |
| 276 | 8.1 | **Pre-producción** | 12d | 2009-10-29 | 2009-11-16 |  | 2008-11-03 | 2008-11-18 | 12d | 39.72d |  |  |  | 128h |
| 277 | 8.1.1 | Guión Técnico | 2d | 2009-10-29 | 2009-11-02 |  | 2008-11-03 | 2008-11-04 | 2d | 39.72d | 0d | start no earlier than 2009-10-29 | director | 16h |
| 278 | 8.1.2 | Desglose Guión | 1d | 2009-11-02 | 2009-11-03 | 277 | 2008-11-05 | 2008-11-05 | 1d | 39.72d | 0d |  | Producción | 8h |
| 279 | 8.1.3 | Storyboard | 4d | 2009-11-03 | 2009-11-09 | 278 | 2008-11-06 | 2008-11-11 | 4d | 39.72d | 0d |  | storyman [200%] | 64h |
| 280 | 8.1.4 | Supervisión | 1d | 2009-11-09 | 2009-11-10 | 279 | 2008-11-12 | 2008-11-12 | 1d | 39.72d | 0d |  | director | 8h |
| 281 | 8.1.5 | Previos Voces | 2d | 2009-11-10 | 2009-11-12 | 280 | 2008-11-13 | 2008-11-14 | 2d | 39.72d | 0d |  | Estudio-Audio | 16h |
| 282 | 8.1.6 | Animática | 2d | 2009-11-12 | 2009-11-16 | 281 | 2008-11-17 | 2008-11-18 | 2d | 39.72d | 0d |  | Téc. Edición | 16h |
| 283 | 8.2 | **Producción** | 42d | 2009-11-16 | 2010-01-20 | 282 | 2008-11-19 | 2009-01-14 | 41d | 39.72d |  |  |  | 1772h |
| 284 | 8.2.1 | Diseño de Personajes Secundarios | 3d | 2009-11-16 | 2009-11-19 |  | 2008-11-19 | 2008-11-21 | 3d | 39.72d | 0d |  | Dibujante | 24h |
| 285 | 8.2.2 | Diseño de Fondos y Props | 3d | 2009-11-19 | 2009-11-24 | 284 | 2008-11-24 | 2008-11-26 | 3d | 39.72d | 0d |  | Dibujante | 24h |
| 286 | 8.2.3 | Modelado de Props | 2d | 2009-11-24 | 2009-11-26 | 285 | 2008-11-27 | 2008-11-28 | 2d | 39.72d | 0d |  | Modelador+set-up | 16h |
| 287 | 8.2.4 | Texturizado de Props | 1d | 2009-11-26 | 2009-11-27 | 286 | 2008-11-27 | 2008-11-27 | 1d | 39.72d | 0d |  | Modelador+set-up | 8h |
| 288 | 8.2.5 | Modelado Personajes secundarios y Morfos | 4d | 2009-11-19 | 2009-11-25 | 284 | 2008-11-28 | 2008-12-02 | 3d | 79d | 0d | start no earlier than 2008-11-27 | Modelador+set-up | 32h |
| 289 | 8.2.6 | Texturizado Personajes | 2d | 2009-11-25 | 2009-11-27 | 288 | 2008-11-28 | 2008-12-01 | 2d | 79d |  |  | Modelador+set-up | 16h |
| 290 | 8.2.7 | Rigging Personajes y objetos | 3d | 2009-11-27 | 2009-12-02 | 287 | 2008-12-02 | 2008-12-03 | 2d | 39.72d | 0d |  | Modelador+set-up | 24h |
| 291 | 8.2.8 | Revisión Modelados | 1d | 2009-12-02 | 2009-12-03 | 290 | 2008-12-04 | 2008-12-04 | 1d | 39.72d | 0d |  | director | 8h |
| 292 | 8.2.9 | Lay-outs | 7d | 2009-12-03 | 2009-12-14 | 291 | 2008-12-05 | 2008-12-15 | 7d | 39.72d | 0d |  | Layout | 56h |
| 293 | 8.2.10 | Supervisión | 6d | 2009-12-14 | 2009-12-22 | 292 | 2008-12-16 | 2008-12-23 | 6d | 39.72d | 0d |  | director | 48h |
| 294 | 8.2.11 | Animación | 13d | 2009-12-22 | 2010-01-15 | 293 | 2008-12-24 | 2009-01-09 | 13d | 40d | 0d |  | Animador [1200%] | 1248h |
| 295 | 8.2.12 | <Margen> | 5d | 2009-12-22 | 2010-01-04 | 293 | 2008-12-24 | 2008-12-30 | 5d | 39.72d | 0d |  |  |  |
| 296 | 8.2.13 | Retakes | 2.5d | 2010-01-04 | 2010-01-07 | 295 | 2008-12-31 | 2009-01-02 | 2.5d | 54.5d |  |  | Animador [1200%] | 240h |
| 297 | 8.2.14 | Aprobación Final | 5d | 2010-01-04 | 2010-01-12 | 295 | 2008-12-31 | 2009-01-06 | 5d | 52d |  |  | director [10%] | 4h |
| 298 | 8.2.15 | Animática | 3d | 2010-01-15 | 2010-01-20 | 294 | 2009-01-12 | 2009-01-14 | 3d | 40d | 0d |  | Téc. Edición | 24h |

Notes:
- 263: 20 minutos el fotograma

| ID | WBS | Task | Duration | Start | Finish | Predecessors | Baseline start | Baseline finish | Baseline duration | Total slack | Free slack | Constraint | Resources | Work |
| --- | --- | --- | --- | --- | --- | --- | --- | --- | --- | --- | --- | --- | --- | --- |
| 299 | 8.3 | **Post-producción** | 22.28d | 2009-12-22 | 2010-01-28 | 293 | 2008-12-31 | 2009-01-15 | 11.4d | 39.72d |  |  |  | 968h |
| 300 | 8.3.1 | Lighting | 10d | 2010-01-04 | 2010-01-19 | 295 | 2008-12-31 | 2009-01-13 | 10d | 47d |  |  | Ilum/Render | 80h |
| 301 | 8.3.2 | <Margen> | 1d | 2010-01-04 | 2010-01-05 | 295 | 2008-12-31 | 2008-12-31 | 1d | 39.72d | 0d |  |  |  |
| 302 | 8.3.3 | Rendering | 10.4d | 2010-01-05 | 2010-01-20 | 301 | 2009-01-01 | 2009-01-15 | 10.4d | 39.72d | 0d |  | Granja Render [1000%] | 832h |
| 303 | 8.3.4 | <Margen> | 5.88d | 2010-01-20 | 2010-01-28 | 302 | 2009-01-01 | 2009-01-05 | 3d | 39.72d |  |  |  |  |
| 304 | 8.3.5 | Imagen Master Betacam | 2d | 2010-01-04 | 2010-01-07 | 305 | 2009-01-13 | 2009-01-14 | 2d | 55d |  |  | Estudio Video | 16h |
| 305 | 8.3.6 | Edición y Composición Imagen | 5d | 2009-12-22 | 2010-01-04 |  | 2009-01-06 | 2009-01-12 | 5d | 52d | 0d |  | Téc. Edición | 40h |
| 306 | 8.4 | **Sonido** | 17d | 2010-01-04 | 2010-01-28 | 305 | 2009-01-13 | 2009-01-22 | 8d | 40d |  |  |  | 40h |
| 307 | 8.4.1 | Doblaje | 2d | 2010-01-04 | 2010-01-07 |  | 2009-01-13 | 2009-01-14 | 2d | 52d | 0d |  | Estudio-Audio | 16h |
| 308 | 8.4.2 | Efectos Sonoros | 2d | 2010-01-07 | 2010-01-11 | 307 | 2009-01-15 | 2009-01-16 | 2d | 52d | 12d |  | Estudio-Audio | 16h |
| 309 | 8.4.3 | Masterización | 0.5d | 2010-01-27 | 2010-01-27 | 308, 312 | 2009-01-22 | 2009-01-22 | 0.5d | 40d | 0d |  | Estudio-Audio | 4h |
| 310 | 8.4.4 | Máster Betacam | 0.5d | 2010-01-27 | 2010-01-28 | 309 | 2009-01-22 | 2009-01-22 | 0.5d | 40d |  |  | Estudio-Audio | 4h |
| 311 | 8.5 | Música Esbozo | 10d | 2009-11-16 | 2009-11-30 | 282 | 2008-11-19 | 2008-12-02 | 10d | 72d | 32d |  | Músico | 80h |
| 312 | 8.6 | Música Final | 5d | 2010-01-20 | 2010-01-27 | 298, 311 | 2009-01-15 | 2009-01-21 | 5d | 40d | 0d |  | Músico | 40h |
| 314 | 9 | **Total Producción** | 70d | 2009-11-06 | 2010-02-19 |  | 2008-11-03 | 2009-01-22 | 59d | 24d |  |  | 09 Producción | 3610.03h |
| 315 | 9.1 | **Pre-producción** | 12d | 2009-11-06 | 2009-11-24 |  | 2008-11-03 | 2008-11-18 | 12d | 24d |  |  |  | 128h |
| 316 | 9.1.1 | Guión Técnico | 2d | 2009-11-06 | 2009-11-10 |  | 2008-11-03 | 2008-11-04 | 2d | 24d | 0d | start no earlier than 2009-11-06 | director | 16h |
| 317 | 9.1.2 | Desglose Guión | 1d | 2009-11-10 | 2009-11-11 | 316 | 2008-11-05 | 2008-11-05 | 1d | 24d | 0d |  | Producción | 8h |
| 318 | 9.1.3 | Storyboard | 4d | 2009-11-11 | 2009-11-17 | 317 | 2008-11-06 | 2008-11-11 | 4d | 24d | 0d |  | storyman [200%] | 64h |
| 319 | 9.1.4 | Supervisión | 1d | 2009-11-17 | 2009-11-18 | 318 | 2008-11-12 | 2008-11-12 | 1d | 24d | 0d |  | director | 8h |
| 320 | 9.1.5 | Previos Voces | 2d | 2009-11-18 | 2009-11-20 | 319 | 2008-11-13 | 2008-11-14 | 2d | 24d | 0d |  | Estudio-Audio | 16h |
| 321 | 9.1.6 | Animática | 2d | 2009-11-20 | 2009-11-24 | 320 | 2008-11-17 | 2008-11-18 | 2d | 24d | 0d |  | Téc. Edición | 16h |
| 322 | 9.2 | **Producción** | 42d | 2009-11-24 | 2010-01-28 | 321 | 2008-11-19 | 2009-01-14 | 41d | 24d |  |  |  | 1772h |
| 323 | 9.2.1 | Diseño de Personajes Secundarios | 3d | 2009-11-24 | 2009-11-27 |  | 2008-11-19 | 2008-11-21 | 3d | 24d | 0d |  | Dibujante | 24h |
| 324 | 9.2.2 | Diseño de Fondos y Props | 3d | 2009-11-27 | 2009-12-02 | 323 | 2008-11-24 | 2008-11-26 | 3d | 24d | 0d |  | Dibujante | 24h |
| 325 | 9.2.3 | Modelado de Props | 2d | 2009-12-02 | 2009-12-04 | 324 | 2008-11-27 | 2008-11-28 | 2d | 24d | 0d |  | Modelador+set-up | 16h |
| 326 | 9.2.4 | Texturizado de Props | 1d | 2009-12-04 | 2009-12-07 | 325 | 2008-11-27 | 2008-11-27 | 1d | 24d | 0d |  | Modelador+set-up | 8h |
| 327 | 9.2.5 | Modelado Personajes secundarios y Morfos | 4d | 2009-11-27 | 2009-12-03 | 323 | 2008-11-28 | 2008-12-02 | 3d | 73d | 0d | start no earlier than 2008-11-27 | Modelador+set-up | 32h |
| 328 | 9.2.6 | Texturizado Personajes | 2d | 2009-12-03 | 2009-12-07 | 327 | 2008-11-28 | 2008-12-01 | 2d | 73d |  |  | Modelador+set-up | 16h |
| 329 | 9.2.7 | Rigging Personajes y objetos | 3d | 2009-12-07 | 2009-12-10 | 326 | 2008-12-02 | 2008-12-03 | 2d | 24d | 0d |  | Modelador+set-up | 24h |
| 330 | 9.2.8 | Revisión Modelados | 1d | 2009-12-10 | 2009-12-11 | 329 | 2008-12-04 | 2008-12-04 | 1d | 24d | 0d |  | director | 8h |
| 331 | 9.2.9 | Lay-outs | 7d | 2009-12-11 | 2009-12-22 | 330 | 2008-12-05 | 2008-12-15 | 7d | 24d | 0d |  | Layout | 56h |
| 332 | 9.2.10 | Supervisión | 6d | 2009-12-22 | 2010-01-05 | 331 | 2008-12-16 | 2008-12-23 | 6d | 24d | 0d |  | director | 48h |
| 333 | 9.2.11 | Animación | 13d | 2010-01-05 | 2010-01-25 | 332 | 2008-12-24 | 2009-01-09 | 13d | 34.12d | 0d |  | Animador [1200%] | 1248h |
| 334 | 9.2.12 | <Margen> | 5d | 2010-01-05 | 2010-01-13 | 332 | 2008-12-24 | 2008-12-30 | 5d | 24d | 0d |  |  |  |
| 335 | 9.2.13 | Retakes | 2.5d | 2010-01-13 | 2010-01-15 | 334 | 2008-12-31 | 2009-01-02 | 2.5d | 48.5d |  |  | Animador [1200%] | 240h |
| 336 | 9.2.14 | Aprobación Final | 5d | 2010-01-13 | 2010-01-20 | 334 | 2008-12-31 | 2009-01-06 | 5d | 46d |  |  | director [10%] | 4h |
| 337 | 9.2.15 | Animática | 3d | 2010-01-25 | 2010-01-28 | 333 | 2009-01-12 | 2009-01-14 | 3d | 34.12d | 0d |  | Téc. Edición | 24h |

Notes:
- 302: 20 minutos el fotograma

| ID | WBS | Task | Duration | Start | Finish | Predecessors | Baseline start | Baseline finish | Baseline duration | Total slack | Free slack | Constraint | Resources | Work |
| --- | --- | --- | --- | --- | --- | --- | --- | --- | --- | --- | --- | --- | --- | --- |
| 338 | 9.3 | **Post-producción** | 32d | 2010-01-05 | 2010-02-19 | 332 | 2008-12-31 | 2009-01-15 | 11.4d | 24d |  |  |  | 991h |
| 339 | 9.3.1 | Lighting | 12.88d | 2010-01-13 | 2010-02-19 | 334 | 2008-12-31 | 2009-01-13 | 10d | 24d |  | start no earlier than 2009-10-23 | Ilum/Render | 103h |
| 340 | 9.3.2 | <Margen> | 1d | 2010-01-13 | 2010-01-14 | 334 | 2008-12-31 | 2008-12-31 | 1d | 33.72d | 0d |  |  |  |
| 341 | 9.3.3 | Rendering | 10.4d | 2010-01-14 | 2010-01-28 | 340 | 2009-01-01 | 2009-01-15 | 10.4d | 33.72d | 0d |  | Granja Render [1000%] | 832h |
| 342 | 9.3.4 | <Margen> | 5.88d | 2010-01-28 | 2010-02-05 | 341 | 2009-01-01 | 2009-01-05 | 3d | 33.72d |  |  |  |  |
| 343 | 9.3.5 | Imagen Master Betacam | 2d | 2010-01-13 | 2010-01-15 | 344 | 2009-01-13 | 2009-01-14 | 2d | 49d |  |  | Estudio Video | 16h |
| 344 | 9.3.6 | Edición y Composición Imagen | 5d | 2010-01-05 | 2010-01-13 |  | 2009-01-06 | 2009-01-12 | 5d | 46.12d | 0d |  | Téc. Edición | 40h |
| 345 | 9.4 | **Sonido** | 16.88d | 2010-01-13 | 2010-02-05 | 344 | 2009-01-13 | 2009-01-22 | 8d | 34.12d |  |  |  | 39.03h |
| 346 | 9.4.1 | Doblaje | 2d | 2010-01-13 | 2010-01-15 |  | 2009-01-13 | 2009-01-14 | 2d | 46.12d | 0d |  | Estudio-Audio | 16h |
| 347 | 9.4.2 | Efectos Sonoros | 2d | 2010-01-15 | 2010-01-19 | 346 | 2009-01-15 | 2009-01-16 | 2d | 46.12d | 12d |  | Estudio-Audio | 16h |
| 348 | 9.4.3 | Masterización | 0.38d | 2010-02-04 | 2010-02-04 | 347, 351 | 2009-01-22 | 2009-01-22 | 0.5d | 34.12d | 0d |  | Estudio-Audio | 3.03h |
| 349 | 9.4.4 | Máster Betacam | 0.5d | 2010-02-04 | 2010-02-05 | 348 | 2009-01-22 | 2009-01-22 | 0.5d | 34.12d |  |  | Estudio-Audio | 4h |
| 350 | 9.5 | Música Esbozo | 10d | 2009-11-24 | 2009-12-08 | 321 | 2008-11-19 | 2008-12-02 | 10d | 66.12d | 32d |  | Músico | 80h |
| 351 | 9.6 | Música Final | 5d | 2010-01-28 | 2010-02-04 | 337, 350 | 2009-01-15 | 2009-01-21 | 5d | 34.12d | 0d |  | Músico | 40h |
| 353 | 10 | **Total Producción** | 60.28d | 2009-11-16 | 2010-02-15 |  | 2008-11-03 | 2009-01-22 | 59d | 27.72d |  |  | 10 Producción | 3510.24h |
| 354 | 10.1 | **Pre-producción** | 12d | 2009-11-16 | 2009-12-02 |  | 2008-11-03 | 2008-11-18 | 12d | 27.72d |  |  |  | 128h |
| 355 | 10.1.1 | Guión Técnico | 2d | 2009-11-16 | 2009-11-18 |  | 2008-11-03 | 2008-11-04 | 2d | 27.72d | 0d | start no earlier than 2009-11-16 | director | 16h |
| 356 | 10.1.2 | Desglose Guión | 1d | 2009-11-18 | 2009-11-19 | 355 | 2008-11-05 | 2008-11-05 | 1d | 27.72d | 0d |  | Producción | 8h |
| 357 | 10.1.3 | Storyboard | 4d | 2009-11-19 | 2009-11-25 | 356 | 2008-11-06 | 2008-11-11 | 4d | 27.72d | 0d |  | storyman [200%] | 64h |
| 358 | 10.1.4 | Supervisión | 1d | 2009-11-25 | 2009-11-26 | 357 | 2008-11-12 | 2008-11-12 | 1d | 27.72d | 0d |  | director | 8h |
| 359 | 10.1.5 | Previos Voces | 2d | 2009-11-26 | 2009-11-30 | 358 | 2008-11-13 | 2008-11-14 | 2d | 27.72d | 0d |  | Estudio-Audio | 16h |
| 360 | 10.1.6 | Animática | 2d | 2009-11-30 | 2009-12-02 | 359 | 2008-11-17 | 2008-11-18 | 2d | 27.72d | 0d |  | Téc. Edición | 16h |
| 361 | 10.2 | **Producción** | 42d | 2009-12-02 | 2010-02-05 | 360 | 2008-11-19 | 2009-01-14 | 41d | 27.72d |  |  |  | 1772h |
| 362 | 10.2.1 | Diseño de Personajes Secundarios | 3d | 2009-12-02 | 2009-12-07 |  | 2008-11-19 | 2008-11-21 | 3d | 27.72d | 0d |  | Dibujante | 24h |
| 363 | 10.2.2 | Diseño de Fondos y Props | 3d | 2009-12-07 | 2009-12-10 | 362 | 2008-11-24 | 2008-11-26 | 3d | 27.72d | 0d |  | Dibujante | 24h |
| 364 | 10.2.3 | Modelado de Props | 2d | 2009-12-10 | 2009-12-14 | 363 | 2008-11-27 | 2008-11-28 | 2d | 27.72d | 0d |  | Modelador+set-up | 16h |
| 365 | 10.2.4 | Texturizado de Props | 1d | 2009-12-14 | 2009-12-15 | 364 | 2008-11-27 | 2008-11-27 | 1d | 27.72d | 0d |  | Modelador+set-up | 8h |
| 366 | 10.2.5 | Modelado Personajes secundarios y Morfos | 4d | 2009-12-07 | 2009-12-11 | 362 | 2008-11-28 | 2008-12-02 | 3d | 67d | 0d | start no earlier than 2008-11-27 | Modelador+set-up | 32h |
| 367 | 10.2.6 | Texturizado Personajes | 2d | 2009-12-11 | 2009-12-15 | 366 | 2008-11-28 | 2008-12-01 | 2d | 67d |  |  | Modelador+set-up | 16h |
| 368 | 10.2.7 | Rigging Personajes y objetos | 3d | 2009-12-15 | 2009-12-18 | 365 | 2008-12-02 | 2008-12-03 | 2d | 27.72d | 0d |  | Modelador+set-up | 24h |
| 369 | 10.2.8 | Revisión Modelados | 1d | 2009-12-18 | 2009-12-21 | 368 | 2008-12-04 | 2008-12-04 | 1d | 27.72d | 0d |  | director | 8h |
| 370 | 10.2.9 | Lay-outs | 7d | 2009-12-21 | 2010-01-05 | 369 | 2008-12-05 | 2008-12-15 | 7d | 27.72d | 0d |  | Layout | 56h |
| 371 | 10.2.10 | Supervisión | 6d | 2010-01-05 | 2010-01-14 | 370 | 2008-12-16 | 2008-12-23 | 6d | 27.72d | 0d |  | director | 48h |
| 372 | 10.2.11 | Animación | 13d | 2010-01-14 | 2010-02-02 | 371 | 2008-12-24 | 2009-01-09 | 13d | 28d | 0d |  | Animador [1200%] | 1248h |
| 373 | 10.2.12 | <Margen> | 5d | 2010-01-14 | 2010-01-21 | 371 | 2008-12-24 | 2008-12-30 | 5d | 27.72d | 0d |  |  |  |
| 374 | 10.2.13 | Retakes | 2.5d | 2010-01-21 | 2010-01-25 | 373 | 2008-12-31 | 2009-01-02 | 2.5d | 42.5d |  |  | Animador [1200%] | 240h |
| 375 | 10.2.14 | Aprobación Final | 5d | 2010-01-21 | 2010-01-28 | 373 | 2008-12-31 | 2009-01-06 | 5d | 40d |  |  | director [10%] | 4h |
| 376 | 10.2.15 | Animática | 3d | 2010-02-02 | 2010-02-05 | 372 | 2009-01-12 | 2009-01-14 | 3d | 28d | 0d |  | Téc. Edición | 24h |

Notes:
- 341: 20 minutos el fotograma

| ID | WBS | Task | Duration | Start | Finish | Predecessors | Baseline start | Baseline finish | Baseline duration | Total slack | Free slack | Constraint | Resources | Work |
| --- | --- | --- | --- | --- | --- | --- | --- | --- | --- | --- | --- | --- | --- | --- |
| 377 | 10.3 | **Post-producción** | 22.28d | 2010-01-14 | 2010-02-15 | 371 | 2008-12-31 | 2009-01-15 | 11.4d | 27.72d |  |  |  | 968h |
| 378 | 10.3.1 | Lighting | 10d | 2010-01-21 | 2010-02-04 | 373 | 2008-12-31 | 2009-01-13 | 10d | 35d |  |  | Ilum/Render | 80h |
| 379 | 10.3.2 | <Margen> | 1d | 2010-01-21 | 2010-01-22 | 373 | 2008-12-31 | 2008-12-31 | 1d | 27.72d | 0d |  |  |  |
| 380 | 10.3.3 | Rendering | 10.4d | 2010-01-22 | 2010-02-05 | 379 | 2009-01-01 | 2009-01-15 | 10.4d | 27.72d | 0d |  | Granja Render [1000%] | 832h |
| 381 | 10.3.4 | <Margen> | 5.88d | 2010-02-05 | 2010-02-15 | 380 | 2009-01-01 | 2009-01-05 | 3d | 27.72d |  |  |  |  |
| 382 | 10.3.5 | Imagen Master Betacam | 2d | 2010-01-21 | 2010-01-25 | 383 | 2009-01-13 | 2009-01-14 | 2d | 43d |  |  | Estudio Video | 16h |
| 383 | 10.3.6 | Edición y Composición Imagen | 5d | 2010-01-14 | 2010-01-21 |  | 2009-01-06 | 2009-01-12 | 5d | 40d | 0d |  | Téc. Edición | 40h |
| 384 | 10.4 | **Sonido** | 17d | 2010-01-21 | 2010-02-15 | 383 | 2009-01-13 | 2009-01-22 | 8d | 28d |  |  |  | 40h |
| 385 | 10.4.1 | Doblaje | 2d | 2010-01-21 | 2010-01-25 |  | 2009-01-13 | 2009-01-14 | 2d | 40d | 0d |  | Estudio-Audio | 16h |
| 386 | 10.4.2 | Efectos Sonoros | 2d | 2010-01-25 | 2010-01-27 | 385 | 2009-01-15 | 2009-01-16 | 2d | 40d | 12d |  | Estudio-Audio | 16h |
| 387 | 10.4.3 | Masterización | 0.5d | 2010-02-12 | 2010-02-12 | 386, 390 | 2009-01-22 | 2009-01-22 | 0.5d | 28d | 0d |  | Estudio-Audio | 4h |
| 388 | 10.4.4 | Máster Betacam | 0.5d | 2010-02-12 | 2010-02-15 | 387 | 2009-01-22 | 2009-01-22 | 0.5d | 28d |  |  | Estudio-Audio | 4h |
| 389 | 10.5 | Música Esbozo | 10d | 2009-12-02 | 2009-12-16 | 360 | 2008-11-19 | 2008-12-02 | 10d | 60d | 32d |  | Músico | 80h |
| 390 | 10.6 | Música Final | 5d | 2010-02-05 | 2010-02-12 | 376, 389 | 2009-01-15 | 2009-01-21 | 5d | 28d | 0d |  | Músico | 40h |
| 392 | 11 | **Total Producción** | 60.28d | 2009-11-24 | 2010-02-23 |  | 2008-11-03 | 2009-01-22 | 59d | 21.72d |  |  | 11 Producción | 3510.24h |
| 393 | 11.1 | **Pre-producción** | 12d | 2009-11-24 | 2009-12-10 |  | 2008-11-03 | 2008-11-18 | 12d | 21.72d |  |  |  | 128h |
| 394 | 11.1.1 | Guión Técnico | 2d | 2009-11-24 | 2009-11-26 |  | 2008-11-03 | 2008-11-04 | 2d | 21.72d | 0d | start no earlier than 2009-11-24 | director | 16h |
| 395 | 11.1.2 | Desglose Guión | 1d | 2009-11-26 | 2009-11-27 | 394 | 2008-11-05 | 2008-11-05 | 1d | 21.72d | 0d |  | Producción | 8h |
| 396 | 11.1.3 | Storyboard | 4d | 2009-11-27 | 2009-12-03 | 395 | 2008-11-06 | 2008-11-11 | 4d | 21.72d | 0d |  | storyman [200%] | 64h |
| 397 | 11.1.4 | Supervisión | 1d | 2009-12-03 | 2009-12-04 | 396 | 2008-11-12 | 2008-11-12 | 1d | 21.72d | 0d |  | director | 8h |
| 398 | 11.1.5 | Previos Voces | 2d | 2009-12-04 | 2009-12-08 | 397 | 2008-11-13 | 2008-11-14 | 2d | 21.72d | 0d |  | Estudio-Audio | 16h |
| 399 | 11.1.6 | Animática | 2d | 2009-12-08 | 2009-12-10 | 398 | 2008-11-17 | 2008-11-18 | 2d | 21.72d | 0d |  | Téc. Edición | 16h |
| 400 | 11.2 | **Producción** | 42d | 2009-12-10 | 2010-02-15 | 399 | 2008-11-19 | 2009-01-14 | 41d | 21.72d |  |  |  | 1772h |
| 401 | 11.2.1 | Diseño de Personajes Secundarios | 3d | 2009-12-10 | 2009-12-15 |  | 2008-11-19 | 2008-11-21 | 3d | 21.72d | 0d |  | Dibujante | 24h |
| 402 | 11.2.2 | Diseño de Fondos y Props | 3d | 2009-12-15 | 2009-12-18 | 401 | 2008-11-24 | 2008-11-26 | 3d | 21.72d | 0d |  | Dibujante | 24h |
| 403 | 11.2.3 | Modelado de Props | 2d | 2009-12-18 | 2009-12-22 | 402 | 2008-11-27 | 2008-11-28 | 2d | 21.72d | 0d |  | Modelador+set-up | 16h |
| 404 | 11.2.4 | Texturizado de Props | 1d | 2009-12-22 | 2009-12-23 | 403 | 2008-11-27 | 2008-11-27 | 1d | 21.72d | 0d |  | Modelador+set-up | 8h |
| 405 | 11.2.5 | Modelado Personajes secundarios y Morfos | 4d | 2009-12-15 | 2009-12-21 | 401 | 2008-11-28 | 2008-12-02 | 3d | 61d | 0d | start no earlier than 2008-11-27 | Modelador+set-up | 32h |
| 406 | 11.2.6 | Texturizado Personajes | 2d | 2009-12-21 | 2009-12-23 | 405 | 2008-11-28 | 2008-12-01 | 2d | 61d |  |  | Modelador+set-up | 16h |
| 407 | 11.2.7 | Rigging Personajes y objetos | 3d | 2009-12-23 | 2009-12-30 | 404 | 2008-12-02 | 2008-12-03 | 2d | 21.72d | 0d |  | Modelador+set-up | 24h |
| 408 | 11.2.8 | Revisión Modelados | 1d | 2009-12-30 | 2010-01-04 | 407 | 2008-12-04 | 2008-12-04 | 1d | 21.72d | 0d |  | director | 8h |
| 409 | 11.2.9 | Lay-outs | 7d | 2010-01-04 | 2010-01-14 | 408 | 2008-12-05 | 2008-12-15 | 7d | 21.72d | 0d |  | Layout | 56h |
| 410 | 11.2.10 | Supervisión | 6d | 2010-01-14 | 2010-01-22 | 409 | 2008-12-16 | 2008-12-23 | 6d | 21.72d | 0d |  | director | 48h |
| 411 | 11.2.11 | Animación | 13d | 2010-01-22 | 2010-02-10 | 410 | 2008-12-24 | 2009-01-09 | 13d | 22d | 0d |  | Animador [1200%] | 1248h |
| 412 | 11.2.12 | <Margen> | 5d | 2010-01-22 | 2010-01-29 | 410 | 2008-12-24 | 2008-12-30 | 5d | 21.72d | 0d |  |  |  |
| 413 | 11.2.13 | Retakes | 2.5d | 2010-01-29 | 2010-02-02 | 412 | 2008-12-31 | 2009-01-02 | 2.5d | 36.5d |  |  | Animador [1200%] | 240h |
| 414 | 11.2.14 | Aprobación Final | 5d | 2010-01-29 | 2010-02-05 | 412 | 2008-12-31 | 2009-01-06 | 5d | 34d |  |  | director [10%] | 4h |
| 415 | 11.2.15 | Animática | 3d | 2010-02-10 | 2010-02-15 | 411 | 2009-01-12 | 2009-01-14 | 3d | 22d | 0d |  | Téc. Edición | 24h |

Notes:
- 380: 20 minutos el fotograma

| ID | WBS | Task | Duration | Start | Finish | Predecessors | Baseline start | Baseline finish | Baseline duration | Total slack | Free slack | Constraint | Resources | Work |
| --- | --- | --- | --- | --- | --- | --- | --- | --- | --- | --- | --- | --- | --- | --- |
| 416 | 11.3 | **Post-producción** | 22.28d | 2010-01-22 | 2010-02-23 | 410 | 2008-12-31 | 2009-01-15 | 11.4d | 21.72d |  |  |  | 968h |
| 417 | 11.3.1 | Lighting | 10d | 2010-01-29 | 2010-02-12 | 412 | 2008-12-31 | 2009-01-13 | 10d | 29d |  |  | Ilum/Render | 80h |
| 418 | 11.3.2 | <Margen> | 1d | 2010-01-29 | 2010-02-01 | 412 | 2008-12-31 | 2008-12-31 | 1d | 21.72d | 0d |  |  |  |
| 419 | 11.3.3 | Rendering | 10.4d | 2010-02-01 | 2010-02-15 | 418 | 2009-01-01 | 2009-01-15 | 10.4d | 21.72d | 0d |  | Granja Render [1000%] | 832h |
| 420 | 11.3.4 | <Margen> | 5.88d | 2010-02-15 | 2010-02-23 | 419 | 2009-01-01 | 2009-01-05 | 3d | 21.72d |  |  |  |  |
| 421 | 11.3.5 | Imagen Master Betacam | 2d | 2010-01-29 | 2010-02-02 | 422 | 2009-01-13 | 2009-01-14 | 2d | 37d |  |  | Estudio Video | 16h |
| 422 | 11.3.6 | Edición y Composición Imagen | 5d | 2010-01-22 | 2010-01-29 |  | 2009-01-06 | 2009-01-12 | 5d | 34d | 0d |  | Téc. Edición | 40h |
| 423 | 11.4 | **Sonido** | 17d | 2010-01-29 | 2010-02-23 | 422 | 2009-01-13 | 2009-01-22 | 8d | 22d |  |  |  | 40h |
| 424 | 11.4.1 | Doblaje | 2d | 2010-01-29 | 2010-02-02 |  | 2009-01-13 | 2009-01-14 | 2d | 34d | 0d |  | Estudio-Audio | 16h |
| 425 | 11.4.2 | Efectos Sonoros | 2d | 2010-02-02 | 2010-02-04 | 424 | 2009-01-15 | 2009-01-16 | 2d | 34d | 12d |  | Estudio-Audio | 16h |
| 426 | 11.4.3 | Masterización | 0.5d | 2010-02-22 | 2010-02-22 | 425, 429 | 2009-01-22 | 2009-01-22 | 0.5d | 22d | 0d |  | Estudio-Audio | 4h |
| 427 | 11.4.4 | Máster Betacam | 0.5d | 2010-02-22 | 2010-02-23 | 426 | 2009-01-22 | 2009-01-22 | 0.5d | 22d |  |  | Estudio-Audio | 4h |
| 428 | 11.5 | Música Esbozo | 10d | 2009-12-10 | 2009-12-28 | 399 | 2008-11-19 | 2008-12-02 | 10d | 54d | 32d |  | Músico | 80h |
| 429 | 11.6 | Música Final | 5d | 2010-02-15 | 2010-02-22 | 415, 428 | 2009-01-15 | 2009-01-21 | 5d | 22d | 0d |  | Músico | 40h |
| 431 | 12 | **Total Producción** | 70d | 2009-12-02 | 2010-03-17 |  | 2008-11-03 | 2009-01-22 | 59d | 6d |  |  | 12 Producción | 3610.03h |
| 432 | 12.1 | **Pre-producción** | 12d | 2009-12-02 | 2009-12-18 |  | 2008-11-03 | 2008-11-18 | 12d | 6d |  |  |  | 128h |
| 433 | 12.1.1 | Guión Técnico | 2d | 2009-12-02 | 2009-12-04 |  | 2008-11-03 | 2008-11-04 | 2d | 6d | 0d | start no earlier than 2009-12-02 | director | 16h |
| 434 | 12.1.2 | Desglose Guión | 1d | 2009-12-04 | 2009-12-07 | 433 | 2008-11-05 | 2008-11-05 | 1d | 6d | 0d |  | Producción | 8h |
| 435 | 12.1.3 | Storyboard | 4d | 2009-12-07 | 2009-12-11 | 434 | 2008-11-06 | 2008-11-11 | 4d | 6d | 0d |  | storyman [200%] | 64h |
| 436 | 12.1.4 | Supervisión | 1d | 2009-12-11 | 2009-12-14 | 435 | 2008-11-12 | 2008-11-12 | 1d | 6d | 0d |  | director | 8h |
| 437 | 12.1.5 | Previos Voces | 2d | 2009-12-14 | 2009-12-16 | 436 | 2008-11-13 | 2008-11-14 | 2d | 6d | 0d |  | Estudio-Audio | 16h |
| 438 | 12.1.6 | Animática | 2d | 2009-12-16 | 2009-12-18 | 437 | 2008-11-17 | 2008-11-18 | 2d | 6d | 0d |  | Téc. Edición | 16h |
| 439 | 12.2 | **Producción** | 42d | 2009-12-18 | 2010-02-23 | 438 | 2008-11-19 | 2009-01-14 | 41d | 6d |  |  |  | 1772h |
| 440 | 12.2.1 | Diseño de Personajes Secundarios | 3d | 2009-12-18 | 2009-12-23 |  | 2008-11-19 | 2008-11-21 | 3d | 6d | 0d |  | Dibujante | 24h |
| 441 | 12.2.2 | Diseño de Fondos y Props | 3d | 2009-12-23 | 2009-12-30 | 440 | 2008-11-24 | 2008-11-26 | 3d | 6d | 0d |  | Dibujante | 24h |
| 442 | 12.2.3 | Modelado de Props | 2d | 2009-12-30 | 2010-01-05 | 441 | 2008-11-27 | 2008-11-28 | 2d | 6d | 0d |  | Modelador+set-up | 16h |
| 443 | 12.2.4 | Texturizado de Props | 1d | 2010-01-05 | 2010-01-07 | 442 | 2008-11-27 | 2008-11-27 | 1d | 6d | 0d |  | Modelador+set-up | 8h |
| 444 | 12.2.5 | Modelado Personajes secundarios y Morfos | 4d | 2009-12-23 | 2010-01-04 | 440 | 2008-11-28 | 2008-12-02 | 3d | 55d | 0d | start no earlier than 2008-11-27 | Modelador+set-up | 32h |
| 445 | 12.2.6 | Texturizado Personajes | 2d | 2010-01-04 | 2010-01-07 | 444 | 2008-11-28 | 2008-12-01 | 2d | 55d |  |  | Modelador+set-up | 16h |
| 446 | 12.2.7 | Rigging Personajes y objetos | 3d | 2010-01-07 | 2010-01-12 | 443 | 2008-12-02 | 2008-12-03 | 2d | 6d | 0d |  | Modelador+set-up | 24h |
| 447 | 12.2.8 | Revisión Modelados | 1d | 2010-01-12 | 2010-01-13 | 446 | 2008-12-04 | 2008-12-04 | 1d | 6d | 0d |  | director | 8h |
| 448 | 12.2.9 | Lay-outs | 7d | 2010-01-13 | 2010-01-22 | 447 | 2008-12-05 | 2008-12-15 | 7d | 6d | 0d |  | Layout | 56h |
| 449 | 12.2.10 | Supervisión | 6d | 2010-01-22 | 2010-02-01 | 448 | 2008-12-16 | 2008-12-23 | 6d | 6d | 0d |  | director | 48h |
| 450 | 12.2.11 | Animación | 13d | 2010-02-01 | 2010-02-18 | 449 | 2008-12-24 | 2009-01-09 | 13d | 16.12d | 0d |  | Animador [1200%] | 1248h |
| 451 | 12.2.12 | <Margen> | 5d | 2010-02-01 | 2010-02-08 | 449 | 2008-12-24 | 2008-12-30 | 5d | 6d | 0d |  |  |  |
| 452 | 12.2.13 | Retakes | 2.5d | 2010-02-08 | 2010-02-10 | 451 | 2008-12-31 | 2009-01-02 | 2.5d | 30.5d |  |  | Animador [1200%] | 240h |
| 453 | 12.2.14 | Aprobación Final | 5d | 2010-02-08 | 2010-02-15 | 451 | 2008-12-31 | 2009-01-06 | 5d | 28d |  |  | director [10%] | 4h |
| 454 | 12.2.15 | Animática | 3d | 2010-02-18 | 2010-02-23 | 450 | 2009-01-12 | 2009-01-14 | 3d | 16.12d | 0d |  | Téc. Edición | 24h |

Notes:
- 419: 20 minutos el fotograma

| ID | WBS | Task | Duration | Start | Finish | Predecessors | Baseline start | Baseline finish | Baseline duration | Total slack | Free slack | Constraint | Resources | Work |
| --- | --- | --- | --- | --- | --- | --- | --- | --- | --- | --- | --- | --- | --- | --- |
| 455 | 12.3 | **Post-producción** | 32d | 2010-02-01 | 2010-03-17 | 449 | 2008-12-31 | 2009-01-15 | 11.4d | 6d |  |  |  | 991h |
| 456 | 12.3.1 | Lighting | 12.88d | 2010-02-08 | 2010-03-17 | 451 | 2008-12-31 | 2009-01-13 | 10d | 6d |  | start no earlier than 2009-10-23 | Ilum/Render | 103h |
| 457 | 12.3.2 | <Margen> | 1d | 2010-02-08 | 2010-02-09 | 451 | 2008-12-31 | 2008-12-31 | 1d | 15.72d | 0d |  |  |  |
| 458 | 12.3.3 | Rendering | 10.4d | 2010-02-09 | 2010-02-23 | 457 | 2009-01-01 | 2009-01-15 | 10.4d | 15.72d | 0d |  | Granja Render [1000%] | 832h |
| 459 | 12.3.4 | <Margen> | 5.88d | 2010-02-23 | 2010-03-03 | 458 | 2009-01-01 | 2009-01-05 | 3d | 15.72d |  |  |  |  |
| 460 | 12.3.5 | Imagen Master Betacam | 2d | 2010-02-08 | 2010-02-10 | 461 | 2009-01-13 | 2009-01-14 | 2d | 31d |  |  | Estudio Video | 16h |
| 461 | 12.3.6 | Edición y Composición Imagen | 5d | 2010-02-01 | 2010-02-08 |  | 2009-01-06 | 2009-01-12 | 5d | 28.12d | 0d |  | Téc. Edición | 40h |
| 462 | 12.4 | **Sonido** | 16.88d | 2010-02-08 | 2010-03-03 | 461 | 2009-01-13 | 2009-01-22 | 8d | 16.12d |  |  |  | 39.03h |
| 463 | 12.4.1 | Doblaje | 2d | 2010-02-08 | 2010-02-10 |  | 2009-01-13 | 2009-01-14 | 2d | 28.12d | 0d |  | Estudio-Audio | 16h |
| 464 | 12.4.2 | Efectos Sonoros | 2d | 2010-02-10 | 2010-02-12 | 463 | 2009-01-15 | 2009-01-16 | 2d | 28.12d | 12d |  | Estudio-Audio | 16h |
| 465 | 12.4.3 | Masterización | 0.38d | 2010-03-02 | 2010-03-02 | 464, 468 | 2009-01-22 | 2009-01-22 | 0.5d | 16.12d | 0d |  | Estudio-Audio | 3.03h |
| 466 | 12.4.4 | Máster Betacam | 0.5d | 2010-03-02 | 2010-03-03 | 465 | 2009-01-22 | 2009-01-22 | 0.5d | 16.12d |  |  | Estudio-Audio | 4h |
| 467 | 12.5 | Música Esbozo | 10d | 2009-12-18 | 2010-01-08 | 438 | 2008-11-19 | 2008-12-02 | 10d | 48.12d | 32d |  | Músico | 80h |
| 468 | 12.6 | Música Final | 5d | 2010-02-23 | 2010-03-02 | 454, 467 | 2009-01-15 | 2009-01-21 | 5d | 16.12d | 0d |  | Músico | 40h |
| 470 | 13 | **Total Producción** | 70d | 2009-12-10 | 2010-03-25 |  | 2008-11-03 | 2009-01-22 | 59d | 0d |  |  | 13 Producción | 3610.03h |
| 471 | 13.1 | **Pre-producción** | 12d | 2009-12-10 | 2009-12-30 |  | 2008-11-03 | 2008-11-18 | 12d | 0d |  |  |  | 128h |
| 472 | 13.1.1 | Guión Técnico | 2d | 2009-12-10 | 2009-12-14 |  | 2008-11-03 | 2008-11-04 | 2d | 0d |  | start no earlier than 2009-12-10 | director | 16h |
| 473 | 13.1.2 | Desglose Guión | 1d | 2009-12-14 | 2009-12-15 | 472 | 2008-11-05 | 2008-11-05 | 1d | 0d |  |  | Producción | 8h |
| 474 | 13.1.3 | Storyboard | 4d | 2009-12-15 | 2009-12-21 | 473 | 2008-11-06 | 2008-11-11 | 4d | 0d |  |  | storyman [200%] | 64h |
| 475 | 13.1.4 | Supervisión | 1d | 2009-12-21 | 2009-12-22 | 474 | 2008-11-12 | 2008-11-12 | 1d | 0d |  |  | director | 8h |
| 476 | 13.1.5 | Previos Voces | 2d | 2009-12-22 | 2009-12-28 | 475 | 2008-11-13 | 2008-11-14 | 2d | 0d |  |  | Estudio-Audio | 16h |
| 477 | 13.1.6 | Animática | 2d | 2009-12-28 | 2009-12-30 | 476 | 2008-11-17 | 2008-11-18 | 2d | 0d |  |  | Téc. Edición | 16h |
| 478 | 13.2 | **Producción** | 42d | 2009-12-30 | 2010-03-03 | 477 | 2008-11-19 | 2009-01-14 | 41d | 0d |  |  |  | 1772h |
| 479 | 13.2.1 | Diseño de Personajes Secundarios | 3d | 2009-12-30 | 2010-01-07 |  | 2008-11-19 | 2008-11-21 | 3d | 0d |  |  | Dibujante | 24h |
| 480 | 13.2.2 | Diseño de Fondos y Props | 3d | 2010-01-07 | 2010-01-12 | 479 | 2008-11-24 | 2008-11-26 | 3d | 0d |  |  | Dibujante | 24h |
| 481 | 13.2.3 | Modelado de Props | 2d | 2010-01-12 | 2010-01-14 | 480 | 2008-11-27 | 2008-11-28 | 2d | 0d |  |  | Modelador+set-up | 16h |
| 482 | 13.2.4 | Texturizado de Props | 1d | 2010-01-14 | 2010-01-15 | 481 | 2008-11-27 | 2008-11-27 | 1d | 0d |  |  | Modelador+set-up | 8h |
| 483 | 13.2.5 | Modelado Personajes secundarios y Morfos | 4d | 2010-01-07 | 2010-01-13 | 479 | 2008-11-28 | 2008-12-02 | 3d | 49d | 0d | start no earlier than 2008-11-27 | Modelador+set-up | 32h |
| 484 | 13.2.6 | Texturizado Personajes | 2d | 2010-01-13 | 2010-01-15 | 483 | 2008-11-28 | 2008-12-01 | 2d | 49d |  |  | Modelador+set-up | 16h |
| 485 | 13.2.7 | Rigging Personajes y objetos | 3d | 2010-01-15 | 2010-01-20 | 482 | 2008-12-02 | 2008-12-03 | 2d | 0d |  |  | Modelador+set-up | 24h |
| 486 | 13.2.8 | Revisión Modelados | 1d | 2010-01-20 | 2010-01-21 | 485 | 2008-12-04 | 2008-12-04 | 1d | 0d |  |  | director | 8h |
| 487 | 13.2.9 | Lay-outs | 7d | 2010-01-21 | 2010-02-01 | 486 | 2008-12-05 | 2008-12-15 | 7d | 0d |  |  | Layout | 56h |
| 488 | 13.2.10 | Supervisión | 6d | 2010-02-01 | 2010-02-09 | 487 | 2008-12-16 | 2008-12-23 | 6d | 0d |  |  | director | 48h |
| 489 | 13.2.11 | Animación | 13d | 2010-02-09 | 2010-02-26 | 488 | 2008-12-24 | 2009-01-09 | 13d | 10.12d | 0d |  | Animador [1200%] | 1248h |
| 490 | 13.2.12 | <Margen> | 5d | 2010-02-09 | 2010-02-16 | 488 | 2008-12-24 | 2008-12-30 | 5d | 0d |  |  |  |  |
| 491 | 13.2.13 | Retakes | 2.5d | 2010-02-16 | 2010-02-18 | 490 | 2008-12-31 | 2009-01-02 | 2.5d | 24.5d |  |  | Animador [1200%] | 240h |
| 492 | 13.2.14 | Aprobación Final | 5d | 2010-02-16 | 2010-02-23 | 490 | 2008-12-31 | 2009-01-06 | 5d | 22d |  |  | director [10%] | 4h |
| 493 | 13.2.15 | Animática | 3d | 2010-02-26 | 2010-03-03 | 489 | 2009-01-12 | 2009-01-14 | 3d | 10.12d | 0d |  | Téc. Edición | 24h |

Notes:
- 458: 20 minutos el fotograma

| ID | WBS | Task | Duration | Start | Finish | Predecessors | Baseline start | Baseline finish | Baseline duration | Total slack | Free slack | Constraint | Resources | Work |
| --- | --- | --- | --- | --- | --- | --- | --- | --- | --- | --- | --- | --- | --- | --- |
| 494 | 13.3 | **Post-producción** | 32d | 2010-02-09 | 2010-03-25 | 488 | 2008-12-31 | 2009-01-15 | 11.4d | 0d |  |  |  | 991h |
| 495 | 13.3.1 | Lighting | 12.88d | 2010-02-16 | 2010-03-25 | 490 | 2008-12-31 | 2009-01-13 | 10d | 0d |  | start no earlier than 2009-10-23 | Ilum/Render | 103h |
| 496 | 13.3.2 | <Margen> | 1d | 2010-02-16 | 2010-02-17 | 490 | 2008-12-31 | 2008-12-31 | 1d | 9.72d | 0d |  |  |  |
| 497 | 13.3.3 | Rendering | 10.4d | 2010-02-17 | 2010-03-03 | 496 | 2009-01-01 | 2009-01-15 | 10.4d | 9.72d | 0d |  | Granja Render [1000%] | 832h |
| 498 | 13.3.4 | <Margen> | 5.88d | 2010-03-03 | 2010-03-11 | 497 | 2009-01-01 | 2009-01-05 | 3d | 9.72d |  |  |  |  |
| 499 | 13.3.5 | Imagen Master Betacam | 2d | 2010-02-16 | 2010-02-18 | 500 | 2009-01-13 | 2009-01-14 | 2d | 25d |  |  | Estudio Video | 16h |
| 500 | 13.3.6 | Edición y Composición Imagen | 5d | 2010-02-09 | 2010-02-16 |  | 2009-01-06 | 2009-01-12 | 5d | 22.12d | 0d |  | Téc. Edición | 40h |
| 501 | 13.4 | **Sonido** | 16.88d | 2010-02-16 | 2010-03-11 | 500 | 2009-01-13 | 2009-01-22 | 8d | 10.12d |  |  |  | 39.03h |
| 502 | 13.4.1 | Doblaje | 2d | 2010-02-16 | 2010-02-18 |  | 2009-01-13 | 2009-01-14 | 2d | 22.12d | 0d |  | Estudio-Audio | 16h |
| 503 | 13.4.2 | Efectos Sonoros | 2d | 2010-02-18 | 2010-02-22 | 502 | 2009-01-15 | 2009-01-16 | 2d | 22.12d | 12d |  | Estudio-Audio | 16h |
| 504 | 13.4.3 | Masterización | 0.38d | 2010-03-10 | 2010-03-10 | 503, 507 | 2009-01-22 | 2009-01-22 | 0.5d | 10.12d | 0d |  | Estudio-Audio | 3.03h |
| 505 | 13.4.4 | Máster Betacam | 0.5d | 2010-03-10 | 2010-03-11 | 504 | 2009-01-22 | 2009-01-22 | 0.5d | 10.12d |  |  | Estudio-Audio | 4h |
| 506 | 13.5 | Música Esbozo | 10d | 2009-12-30 | 2010-01-18 | 477 | 2008-11-19 | 2008-12-02 | 10d | 42.12d | 32d |  | Músico | 80h |
| 507 | 13.6 | Música Final | 5d | 2010-03-03 | 2010-03-10 | 493, 506 | 2009-01-15 | 2009-01-21 | 5d | 10.12d | 0d |  | Músico | 40h |

Notes:
- 497: 20 minutos el fotograma
